# NBIA 5.0

How a schedule from MS Project changed from version to version. A marks actual dates.

## Version 1 (saved 2010-11-23)

Note of the change: wrong date!

| ID | WBS | Task | Duration | Start | Finish | Predecessors | Complete | Total float | Constraint |
| --- | --- | --- | --- | --- | --- | --- | --- | --- | --- |
| 1 |  | Ivy Repository Migration | 1w | 2010-09-27 A | 2010-10-01 A |  | 100% |  |  |
| 3 | 2 | **Data Access Enhancements** | 28d | 2010-10-04 A | 2010-11-10 A |  | 100% |  |  |
| 4 |  | Split webapp dao-business logic | 1w | 2010-10-04 A | 2010-10-08 A |  | 100% |  |  |
| 5 |  | Capture baseline benchmarks | 1w | 2010-10-04 A | 2010-10-08 A |  | 100% |  |  |
| 6 |  | Introduce Spring data access into CTP | 2w | 2010-10-04 A | 2010-10-15 A |  | 100% |  |  |
| 7 |  | Post-Spring Benchmarks | 2d | 2010-10-18 A | 2010-10-19 A | 6 | 100% |  |  |
| 8 |  | CTP upgrade to X42 | 1w | 2010-10-20 A | 2010-10-26 A |  | 100% |  |  |
| 9 |  | Introduce Spring data access into webapp | 2w | 2010-10-11 A | 2010-10-22 A | 4 | 100% |  |  |
| 10 |  | Evaluate possibility of merging CTP-webapp data access | 1d | 2010-11-10 A | 2010-11-10 A |  | 100% |  |  |
| 12 | 3 | **Oracle Support** | 25d | 2010-10-11 A | 2010-11-12 |  | 71% | 31d |  |
| 13 |  | Translate Schema | 2w | 2010-10-11 A | 2010-10-22 A |  | 100% |  |  |
| 14 |  | Setup/Request new Oracle instance with migration | 2w | 2010-10-25 | 2010-11-05 | 13 |  | 33d |  |
| 15 |  | Translate custom SQL in Hibernate mappings | 1w | 2010-10-25 A | 2010-10-29 A |  | 100% |  |  |
| 16 |  | Setup Oracle-specific Liquibase configuration | 2d | 2010-11-01 A | 2010-11-02 A |  | 100% |  |  |
| 17 |  | Custom SQL in patient search | 2d | 2010-11-03 A | 2010-11-04 A |  | 100% |  |  |
| 18 |  | Custom SQL in submission history | 2d | 2010-11-05 A | 2010-11-08 A |  | 100% |  |  |
| 19 |  | Deployment Scripts and GUI Installer | 4d | 2010-11-09 A | 2010-11-12 A | 18 | 100% |  |  |
| 21 | 4 | **Ultrasound search (Round 1)** | 37d | 2010-09-27 A | 2010-11-16 A |  | 100% |  |  |
| 22 |  | General Research | 1w | 2010-09-27 A | 2010-10-01 A |  | 100% |  |  |
| 23 |  | Map SME requirements to concrete DICOM tags and wireframe | 2w | 2010-10-04 A | 2010-10-15 A |  | 100% |  |  |
| 24 |  | Customize Classic Search UI to include US fields | 1w | 2010-10-18 A | 2010-10-22 A |  | 100% |  |  |
| 25 |  | Customize view series page to handle ultrasound | 2w | 2010-10-25 A | 2010-11-05 A |  | 100% |  |  |
| 26 |  | Map DICOM tags to NBIA internal domain model (includes code changes) | 7d | 2010-11-08 A | 2010-11-16 A |  | 100% |  |  |
| 28 |  | ****** SCOPE NAILED DOWN ****** | 0d | 2010-09-27 | 2010-09-27 |  |  | 63d |  |
| 30 |  | HL7 v3 Training | 2d | 2010-11-15 A | 2010-11-16 A |  | 100% |  | must start on 2010-11-15 |
| 32 |  | LIDC annotation of annotation re-generation | 5d | 2010-11-16 A | 2010-11-22 |  | 90% | 0d | must start on 2010-11-16 |
| 34 | 8 | **Ultrasound Search Revisited (branch)** | 30d? | 2010-11-16 A | 2011-01-06 |  | 17% | 0d |  |
| 35 |  | Deploy NBIA for Anna to experiment on | 1d | 2010-11-16 A | 2010-11-16 A |  | 100% |  |  |
| 36 |  | SME experimentation | 1w | 2010-11-17 A | 2010-11-23 A | 35 | 100% |  |  |
| 37 |  | Review SME feedback | 1d | 2010-11-24 | 2010-11-24 | 36 |  | 0d |  |
| 38 |  | Map DICOM tags to NBIA internal domain model (includes code changes) | 1w | 2010-11-29 | 2010-12-03 | 37 |  | 0d |  |
| 39 |  | Customize Classic Search UI to include US fields | 1w | 2010-12-06 | 2010-12-10 | 38 |  | 8d |  |
| 40 |  | Remote Search impact | 1w | 2010-12-13 | 2010-12-17 | 39 |  | 8d |  |
| 41 |  | Add fields to dynamic search | 1d? | 2010-12-09 | 2010-12-09 | 38 |  | 14d |  |
| 42 |  | Update submission module to index tags | 1w | 2010-12-10 | 2010-12-16 | 38, 41 |  | 0d |  |
| 43 | 8.9 | **Update search to include ultrasound tags** | 8d | 2010-12-20 | 2011-01-06 |  |  | 0d |  |
| 44 |  | Code | 1w | 2010-12-20 | 2011-01-03 | 42 |  | 0d |  |
| 45 |  | Unit Test | 3d | 2011-01-04 | 2011-01-06 | 44 |  | 0d |  |
| 48 | 9 | **NBIA 5.0** | 23d? | 2010-11-12 A | 2010-12-16 |  | 26% | 9d |  |
| 49 |  | Decouple deletion dao-business logic (Data Access Enhancements) | 1w | 2010-11-17 A | 2010-11-23 |  | 80% | 0d | must start on 2010-11-17 |
| 51 |  | AHP3 Support | 14d? | 2010-11-16 A | 2010-12-07 |  | 40% | 0d | must start on 2010-11-16 |
| 53 |  | Update Installation Guide | 1d | 2010-11-17 A | 2010-11-17 A |  | 100% |  | must start on 2010-11-17 |
| 54 |  | Appsupport Review of Installation Guide | 3d | 2010-11-19 A | 2010-11-23 |  | 66% | 0d | must start on 2010-11-19 |
| 56 |  | Push Tag #1 to QA | 1h | 2010-11-12 A | 2010-11-12 A |  | 100% |  | start no earlier than 2010-11-12 |
| 58 |  | Prepare release notes | 4h | 2010-11-12 A | 2010-11-12 A | 56 | 100% |  |  |
| 60 |  | Push Tag #2 to QA | 1h | 2010-11-24 | 2010-11-24 | 49, 58 |  | 23.88d |  |
| 62 |  | QA Testing | 14d | 2010-11-16 | 2010-12-07 | 56 |  | 0d | must finish on 2010-12-07 |
| 64 | 9.9 | **RSNA (Jim)** | 5d | 2010-11-29 | 2010-12-03 |  |  | 0d |  |
| 65 |  | CTP meeting with John | 1d | 2010-11-29 | 2010-11-29 |  |  | 0d | must start on 2010-11-29 |
| 66 |  | Attend Session of Steamline Imaging Server | 1d | 2010-11-30 | 2010-11-30 | 65 |  | 17d |  |
| 67 |  | Check out google earth Imaging Technology | 1d | 2010-12-01 | 2010-12-01 | 66 |  | 17d |  |
| 68 |  | Research for Path Imaging Storage in DICOM format | 1d | 2010-12-02 | 2010-12-02 | 67, 65 |  | 17d | start no earlier than 2010-11-29 |
| 69 |  | Attend session of Ultrasound Imaging to seek a better way to implement NBIA | 4h | 2010-12-03 | 2010-12-03 | 68, 65 |  | 17d |  |
| 70 |  | Check out some products with Path Imaging Storage | 4h | 2010-12-03 | 2010-12-03 | 69, 65 |  | 17d | finish no earlier than 2010-12-03 |
| 72 |  | Migrate staging MySQL -> Oracle | 3d | 2010-12-03 | 2010-12-07 |  |  | 0d | must finish on 2010-12-07 |
| 73 |  | NBIA 5.0 Staging | 1d | 2010-12-08 | 2010-12-08 | 72 |  | 1d | start no earlier than 2010-12-08 |
| 74 |  | Sanity Regression against staging | 1d? | 2010-12-09 | 2010-12-09 | 73 |  | 1d |  |
| 75 |  | Order AppScan on staging | 0d | 2010-12-09 | 2010-12-09 | 74 |  | 1d |  |
| 77 |  | Migrate production MySQL -> Oracle | 3d | 2010-12-10 | 2010-12-14 | 75 |  | 1d |  |
| 79 |  | NBIA 5.0 Production | 1d | 2010-12-16 | 2010-12-16 | 77, 75 |  | 0d | must start on 2010-12-16 |
| 81 | 10 | **Bug Fixing** | 4.5d | 2010-11-17 | 2010-11-23 |  |  | 0d |  |
| 82 |  | Add warning text to GUI installer about potential to wipe out CTP storage system | 3h | 2010-11-17 | 2010-11-17 |  |  | 0d | must start on 2010-11-17 |
| 83 |  | GUI installer fails on upgrade from NBIA 4.4 | 2d | 2010-11-18 | 2010-11-19 |  |  | 0d | must start on 2010-11-18 |
| 84 |  | Zipping of download basket returns empty basket | 1d | 2010-11-19 | 2010-11-19 |  |  | 0d | must start on 2010-11-19 |
| 85 |  | GUI installer fails when doing install with MySQL | 4h | 2010-11-23 | 2010-11-23 |  |  | 0d | must start on 2010-11-23 |
| 88 | 11 | **Other NBIA 5.1** | 10d | 2010-11-19 A | 2010-12-06 |  | 40% | 0d |  |
| 89 |  | Add modality info to web search UI | 2w | 2010-11-19 A | 2010-12-06 |  | 40% | 0d | must start on 2010-11-19 |
| 91 | 12 | **Vacations** | 1d? | 2010-09-27 | 2010-09-27 |  |  | 65d |  |
| 92 |  | Eric (11/26,12/20 - ? ) | 1d? | 2010-09-27 | 2010-09-27 |  |  | 64d |  |
| 93 |  | Jim (11/26, 12/27-12/31) | 1d? | 2010-09-27 | 2010-09-27 |  |  | 64d |  |

| ID | Task | Duration | Start | Finish | Total float |
| --- | --- | --- | --- | --- | --- |
| 94 | Qinyan (11/26, 12/27-12/31) | 1d? | 2010-09-27 | 2010-09-27 | 64d |
| 95 | Praskash (11/26, 12/29-12/31) | 1d? | 2010-09-27 | 2010-09-27 | 64d |

## Version 2 (saved 2010-11-29)

Note of the change: push staging deployment back

Last finish stays 2011-01-06. Complete tasks 25 → 33.

Added:

| ID | Task | Duration | Start | Finish | Resources |
| --- | --- | --- | --- | --- | --- |
| 90 | **External Model Harmonization** | 5d | 2010-09-27 A | 2010-10-01 |  |
| 91 | CBIIT Self-Study on DSR,metadata,etc. | 1w | 2010-09-27 A | 2010-10-01 | Prakash |
| 94 | **AIM Search Prototype** | 1d? | 2010-09-27 | 2010-09-27 |  |
| 95 | **AIM Submission** | 1d? | 2010-09-27 | 2010-09-27 |  |
| 96 | Annotation Recognizer | 1d? | 2010-09-27 | 2010-09-27 |  |
| 97 | **Search** | 1d? | 2010-09-27 | 2010-09-27 |  |
| 98 | UI | 1d? | 2010-09-27 | 2010-09-27 |  |

Removed: 88 Other NBIA 5.1

Changed:

| ID | Task | Start | Finish | Duration | Complete | Total float | Predecessors | Other |
| --- | --- | --- | --- | --- | --- | --- | --- | --- |
| 12 | **Oracle Support** |  | 2010-11-12 A |  | 71% → 100% | 31d → none |  |  |
| 14 | Setup/Request new Oracle instance with migration | 2010-10-25 A | 2010-11-05 A |  | 0% → 100% | 33d → none |  | resources none → Eric2 |
| 32 | LIDC annotation of annotation re-generation |  | 2010-11-22 A |  | 90% → 100% | 0d → none |  |  |
| 34 | **Ultrasound Search Revisited (branch)** |  |  |  | 17% → 35% |  |  |  |
| 37 | Review SME feedback | 2010-11-24 A | 2010-11-24 A |  | 0% → 100% | 0d → none |  |  |
| 38 | Map DICOM tags to NBIA internal domain model (includes code changes) | 2010-11-29 A |  |  | 0% → 50% |  |  |  |
| 41 | Add fields to dynamic search | 2010-12-09 → 2010-12-06 (-3d) | 2010-12-09 → 2010-12-06 (-3d) |  |  | 14d → 17d |  |  |
| 42 | Update submission module to index tags | 2010-12-10 → 2010-12-07 (-3d) | 2010-12-16 → 2010-12-13 (-3d) |  |  |  |  |  |
| 46 | Add modality info to web search UI |  | 2010-12-06 → 2010-11-29 A (-7d) | 2w → 1w | 40% → 100% | 0d → none |  |  |
| 49 | **NBIA 5.0** |  |  |  | 26% → 52% | 9d → 0d |  |  |
| 50 | Decouple deletion dao-business logic (Data Access Enhancements) |  | 2010-11-23 A |  | 80% → 100% | 0d → none |  |  |
| 52 | AHP3 Support |  | 2010-12-07 A |  | 40% → 100% | 0d → none |  |  |
| 55 | Appsupport Review of Installation Guide |  | 2010-11-23 A |  | 66% → 100% | 0d → none |  |  |
| 61 | Push Tag #2 to QA | 2010-11-24 A | 2010-11-24 A |  | 0% → 100% | 23.88d → none |  |  |
| 66 | NBIA 5.0 Staging | 2010-12-08 → 2010-12-10 (+2d) | 2010-12-08 → 2010-12-10 (+2d) |  |  | 1d → 0d |  | constraint start no earlier than 2010-12-08 → must start on 2010-12-10 |
| 67 | Sanity Regression against staging | 2010-12-09 → 2010-12-13 (+4d) | 2010-12-09 → 2010-12-13 (+4d) |  |  | 1d → 0d |  |  |
| 68 | Order AppScan on staging | 2010-12-09 → 2010-12-13 (+4d) | 2010-12-09 → 2010-12-13 (+4d) |  |  | 1d → 0d |  |  |
| 70 | Migrate production MySQL -> Oracle | 2010-12-10 → 2010-12-14 (+4d) | 2010-12-14 → 2010-12-15 (+1d) | 3d → 2d |  | 1d → 0d |  |  |
| 78 | Research for Path Imaging Storage in DICOM format |  |  |  |  | 17d → 18d | 77, 75 → 77 |  |
| 79 | Attend session of Ultrasound Imaging to seek a better way to implement NBIA |  |  |  |  | 17d → 18d | 78, 75 → 78 |  |
| 80 | Check out some products with Path Imaging Storage |  |  |  |  | 17d → 18d | 79, 75 → 79 |  |
| 101 | Eric (11/26,12/13, 12/20 - ? ) |  |  |  |  | 64d → 65d |  | was named Eric (11/26,12/20 - ? ) |

## Version 3 (saved 2010-11-30)

Note of the change: add draft aim plan

Last finish stays 2011-01-06.

Added:

| ID | Task | Duration | Start | Finish | Predecessors | Constraint | Resources |
| --- | --- | --- | --- | --- | --- | --- | --- |
| 95 | Search UI | 3d | 2010-12-01 | 2010-12-03 |  | must start on 2010-12-01 | Eric |
| 98 | AIM Parsing | 2d | 2010-12-09 | 2010-12-10 | 97 |  | Eric |
| 99 | Add relational tables | 1d | 2010-12-13 | 2010-12-13 | 98 |  | Eric |
| 100 | Data Access (domain, and DAO) | 3d | 2010-12-14 | 2010-12-16 | 99 |  | Eric |
| 102 | AIM de-identification configuration | 1d | 2010-12-17 | 2010-12-17 | 96 |  | Eric |

Removed: 98 UI

Changed:

| ID | Task | Start | Finish | Duration | Total float | Predecessors | Other |
| --- | --- | --- | --- | --- | --- | --- | --- |
| 94 | **AIM Search Prototype** | 2010-09-27 → 2010-12-01 (+65d) | 2010-09-27 → 2010-12-20 (+84d) | 1d? → 14d | 65d → 0d |  |  |
| 96 | **AIM Submission** | 2010-09-27 → 2010-12-06 (+70d) | 2010-09-27 → 2010-12-16 (+80d) | 1d? → 9d | 65d → 7d |  |  |
| 97 | Annotation Recognizer | 2010-09-27 → 2010-12-06 (+70d) | 2010-09-27 → 2010-12-08 (+72d) | 1d? → 3d | 65d → 7d | none → 95 | resources none → Eric |
| 101 | Connect Search UI to backend | 2010-09-27 → 2010-12-17 (+81d) | 2010-09-27 → 2010-12-20 (+84d) | 1d? → 2d | 65d → 7d | none → 96 | was named Search; resources none → Eric |

## Version 4 (saved 2010-12-06)

Note of the change: work amount for connecting search to backend is too low

Last finish stays 2011-01-06. Complete tasks 33 → 46.

Added:

| ID | Task | Duration | Start | Finish | Constraint | Resources |
| --- | --- | --- | --- | --- | --- | --- |
| 88 | FTP downloads do not record the download the same way the HTTP and Download Mgr downloads do | 4d | 2010-12-01 | 2010-12-06 | must start on 2010-12-01 |  |
| 89 | FTP download that includes remote series fails | 2d | 2010-12-02 | 2010-12-03 | must start on 2010-12-02 |  |
| 90 | NCIA grid service port number updating from 21080 to 8080 | 2d | 2010-12-01 | 2010-12-02 | must start on 2010-12-01 |  |
| 91 | Upgrading NBIA 4.4 to 5.0 GUI Installation failed (AHP3 regression) | 1d | 2010-12-03 | 2010-12-03 | must start on 2010-12-03 |  |
| 95 | CBIIT Self-Study on DSR,metadata,etc. pt 2 | 1w | 2010-12-06 A | 2010-12-10 | must start on 2010-12-06 | Prakash |

Changed:

| ID | Task | Start | Finish | Duration | Complete | Total float | Predecessors | Other |
| --- | --- | --- | --- | --- | --- | --- | --- | --- |
| 34 | **Ultrasound Search Revisited (branch)** |  |  | 30d? → 30d | 35% → 48% |  |  |  |
| 38 | Map DICOM tags to NBIA internal domain model (includes code changes) |  | 2010-12-03 A |  | 50% → 100% | 0d → none |  |  |
| 39 | Customize Classic Search UI to include US fields | 2010-12-06 A |  |  | 0% → 50% |  |  |  |
| 41 | Add fields to dynamic search |  |  | 1d? → 1d |  |  |  |  |
| 42 | Update submission module to index tags |  |  |  |  |  | 38, 41 → 38 |  |
| 49 | **NBIA 5.0** |  |  |  | 52% → 58% |  |  |  |
| 65 | Migrate staging MySQL -> Oracle | 2010-12-03 A | 2010-12-07 A |  | 0% → 100% | 0d → none |  |  |
| 74 | **RSNA (Jim)** | 2010-11-29 A | 2010-12-03 A |  | 0% → 100% | 0d → none |  | resources Jim → none |
| 75 | CTP meeting with John | 2010-11-29 A | 2010-11-29 A |  | 0% → 100% | 0d → none |  | resources none → Jim |
| 76 | Attend Session of Steamline Imaging Server | 2010-11-30 A | 2010-11-30 A |  | 0% → 100% | 18d → none |  | resources none → Jim |
| 77 | Check out google earth Imaging Technology | 2010-12-01 A | 2010-12-01 A |  | 0% → 100% | 18d → none |  | resources none → Jim |
| 78 | Research for Path Imaging Storage in DICOM format | 2010-12-02 A | 2010-12-02 A |  | 0% → 100% | 18d → none |  | resources none → Jim |
| 79 | Attend session of Ultrasound Imaging to seek a better way to implement NBIA | 2010-12-03 A | 2010-12-03 A |  | 0% → 100% | 18d → none |  | resources none → Jim |
| 80 | Check out some products with Path Imaging Storage | 2010-12-03 A | 2010-12-03 A |  | 0% → 100% | 18d → none |  | resources none → Jim |
| 83 | **Bug Fixing** |  | 2010-11-23 → 2010-12-06 (+13d) | 4.5d → 12d |  |  |  |  |
| 93 | **External Model Harmonization** |  | 2010-10-01 → 2010-12-10 (+70d) | 5d → 53d | 20% → 43% | 61d → 0d |  |  |
| 94 | CBIIT Self-Study on DSR,metadata,etc. pt 1 |  | 2010-10-01 → 2010-09-28 A (-3d) | 1w → 2d | 20% → 100% | 61d → none |  | was named CBIIT Self-Study on DSR,metadata,etc.; constraint none → must start on 2010-11-29 |
| 97 | **AIM Search Prototype** | 2010-12-01 A | 2010-12-20 → 2010-12-23 (+3d) | 14d → 17d | 0% → 54% | 0d → 4d |  |  |
| 98 | Search UI | 2010-12-01 A | 2010-12-03 A |  | 0% → 100% | 0d → none |  |  |
| 99 | **AIM Submission** | 2010-12-06 A |  |  | 0% → 75% |  |  |  |
| 100 | Annotation Recognizer | 2010-12-06 A | 2010-12-08 A |  | 0% → 100% | 7d → none |  |  |
| 101 | AIM Parsing | 2010-12-09 A | 2010-12-10 A |  | 0% → 100% | 7d → none |  |  |
| 102 | Add relational tables | 2010-12-13 A | 2010-12-13 A |  | 0% → 100% | 7d → none |  |  |
| 103 | Data Access (domain, and DAO) | 2010-12-14 A |  |  | 0% → 25% |  |  |  |
| 104 | Connect Search UI to backend |  | 2010-12-20 → 2010-12-23 (+3d) | 2d → 1w |  | 7d → 4d |  |  |

## Version 5 (saved 2010-12-07)

Note of the change: working on adding documentation and transition tasks

Last finish 2011-01-06 → 2011-01-07 (+1d).

Added:

| ID | Task | Duration | Start | Finish |
| --- | --- | --- | --- | --- |
| 64 | **Transition Documentation** | 1d? | 2010-09-27 | 2010-09-27 |
| 65 | Submission Reports | 1d? | 2010-09-27 | 2010-09-27 |
| 66 | Grid Service | 1d? | 2010-09-27 | 2010-09-27 |
| 67 | Remote Search | 1d? | 2010-09-27 | 2010-09-27 |
| 68 | Cedara | 1d? | 2010-09-27 | 2010-09-27 |
| 69 | QC Tool | 1d? | 2010-09-27 | 2010-09-27 |
| 70 | Shared List | 1d? | 2010-09-27 | 2010-09-27 |
| 71 | Collection Description | 1d? | 2010-09-27 | 2010-09-27 |
| 72 | Dynamic Search | 1d? | 2010-09-27 | 2010-09-27 |
| 73 | CTP | 1d? | 2010-09-27 | 2010-09-27 |
| 74 | Database Adapter | 1d? | 2010-09-27 | 2010-09-27 |
| 75 | Deletion | 1d? | 2010-09-27 | 2010-09-27 |
| 76 | Saved Query | 1d? | 2010-09-27 | 2010-09-27 |
| 77 | Data Basket | 1d? | 2010-09-27 | 2010-09-27 |
| 78 | HTTP/FTP Download | 1d? | 2010-09-27 | 2010-09-27 |
| 79 | Download Manager | 1d? | 2010-09-27 | 2010-09-27 |
| 94 | **Ultrasound Search Revisited Part 3 (branch)** | 19d | 2010-12-06 A | 2011-01-07 |
| 102 | **AIM Search Prototype Part 2** | 5d | 2010-12-13 A | 2010-12-20 |

Changed:

| ID | Task | Start | Finish | Duration | Complete | Total float | Predecessors | Other |
| --- | --- | --- | --- | --- | --- | --- | --- | --- |
| 27 | **Ultrasound Search (Round 2)** |  | 2011-01-06 → 2010-12-03 A (-34d) | 30d → 12d | 48% → 100% | 0d → none |  | was named Ultrasound Search Revisited (branch) |
| 33 | **NBIA 5.0** |  |  |  | 58% → 55% |  |  |  |
| 41 | QA Testing | 2010-11-16 → 2010-11-18 (+2d) | 2010-12-07 → 2010-12-13 (+6d) | 14d → 16d |  |  |  | constraint must finish on 2010-12-07 → must finish on 2010-12-13 |
| 43 | NBIA 5.0 Staging | 2010-12-10 → 2010-12-13 (+3d) | 2010-12-10 → 2010-12-13 (+3d) |  |  |  |  | constraint must start on 2010-12-10 → must start on 2010-12-13 |
| 44 | Sanity Regression against staging |  | 2010-12-13 → 2010-12-14 (+1d) | 1d? → 2d? |  | 0d → -1d |  | constraint none → must start on 2010-12-13; resources Quy; Eric → Eric |
| 45 | Order AppScan on staging |  |  |  |  |  | 44 → none | constraint none → must start on 2010-12-13 |
| 46 | Migrate production MySQL -> Oracle | 2010-12-14 → 2010-12-13 (-1d) | 2010-12-15 → 2010-12-14 (-1d) |  |  |  | 45 → none | constraint none → must start on 2010-12-13 |
| 80 | **External Model Harmonization** |  | 2010-12-10 → 2010-12-06 A (-4d) | 53d → 49d | 43% → 100% | 0d → none |  |  |
| 82 | CBIIT Self-Study on DSR,metadata,etc. pt 2 |  | 2010-12-10 → 2010-12-06 A (-4d) | 1w → 1d | 20% → 100% | 0d → none |  |  |
| 83 | **AIM Search Prototype** |  | 2010-12-23 → 2010-12-13 (-10d) | 17d → 8.5d | 54% → 90% | 4d → 8.5d |  |  |
| 85 | **AIM Submission** |  | 2010-12-16 → 2010-12-13 (-3d) | 9d → 5.5d |  | 7d → 8.5d |  |  |
| 86 | Annotation Recognizer |  | 2010-12-08 A → 2010-12-06 A (-2d) | 3d → 4h |  |  |  |  |
| 87 | AIM Parsing |  | 2010-12-10 A → 2010-12-09 (-1d) | 2d → 1d | 100% → 50% | none → 10d |  |  |
| 88 | Add relational tables |  |  | 1d → 4h |  |  |  |  |
| 96 | Update submission module to index tags | 2010-12-07 A |  |  | 0% → 20% |  |  |  |
| 97 | Add fields to dynamic search | 2010-12-06 → 2010-12-13 (+7d) | 2010-12-06 → 2010-12-13 (+7d) |  |  | 17d → 13d | 31 → 95 |  |
| 98 | **Update search to include ultrasound tags** | 2010-12-20 → 2010-12-14 (-6d) | 2011-01-06 → 2010-12-23 (-14d) |  |  |  |  |  |
| 99 | Code | 2010-12-20 → 2010-12-14 (-6d) | 2011-01-03 → 2010-12-20 (-14d) |  |  |  |  |  |
| 100 | Unit Test | 2011-01-04 → 2010-12-21 (-14d) | 2011-01-06 → 2010-12-23 (-14d) |  |  |  |  |  |
| 101 | Remote Search impact | 2010-12-13 → 2011-01-03 (+21d) | 2010-12-17 → 2011-01-07 (+21d) |  |  | 8d → 0d | 95 → 98 |  |
| 104 | Connect Search UI to backend | 2010-12-17 → 2010-12-13 (-4d) | 2010-12-23 → 2010-12-20 (-3d) |  |  | 4d → 8.5d |  |  |
| 105 | AIM de-identification configuration | 2010-12-17 → 2010-12-13 (-4d) | 2010-12-17 → 2010-12-14 (-3d) |  |  | 8d → 12.5d |  |  |

## Version 6 (saved 2010-12-13)

Note of the change: update tasks

Last finish 2011-01-07 → 2011-01-13 (+6d). Complete tasks 46 → 48.

Added:

| ID | Task | Duration | Start | Finish | Predecessors | Constraint | Resources |
| --- | --- | --- | --- | --- | --- | --- | --- |
| 67 | NBIA 5.0 local instance with Oracle backend not working when integrated with UPT | 2d | 2010-12-09 | 2010-12-10 |  | must start on 2010-12-09 |  |
| 68 | Download Manager fails to download remote series | 4h | 2010-12-11 | 2010-12-13 |  | must start on 2010-12-11 |  |
| 90 | Download Mgr | 4d | 2010-12-22 | 2010-12-29 | 89 |  | Prakash |
| 96 | ==============End of POP=============== | 0d | 2010-12-31 | 2010-12-31 |  | must start on 2010-12-31 |  |

Removed: 79 Download Manager

Changed:

| ID | Task | Start | Finish | Duration | Complete | Total float | Predecessors | Other |
| --- | --- | --- | --- | --- | --- | --- | --- | --- |
| 33 | **NBIA 5.0** |  |  |  | 55% → 88% |  |  |  |
| 41 | QA Testing | 2010-11-18 A | 2010-12-13 A |  | 0% → 100% | 0d → none |  |  |
| 44 | Sanity Regression against staging |  | 2010-12-14 → 2010-12-13 (-1d) | 2d? → 1d? |  |  |  | resources Eric → Eric; Quy |
| 46 | Migrate production MySQL -> Oracle |  | 2010-12-14 → 2010-12-15 (+1d) | 2d → 3d |  |  |  |  |
| 58 | **Bug Fixing** |  | 2010-12-06 → 2010-12-13 (+7d) | 12d → 16.5d |  |  |  |  |
| 69 | **AIM Search Prototype** |  | 2010-12-13 A |  | 90% → 100% | 8.5d → none |  |  |
| 71 | **AIM Submission** |  | 2010-12-13 A |  | 75% → 100% | 8.5d → none |  |  |
| 73 | AIM Parsing |  | 2010-12-09 A |  | 50% → 100% | 10d → none |  |  |
| 75 | **Transition Documentation** | 2010-09-27 → 2010-12-08 A (+72d) | 2010-09-27 → 2010-12-29 (+93d) | 1d? → 14d | 0% → 9% | 66d → 11d |  |  |
| 76 | Grid Service | 2010-09-27 → 2010-12-08 A (+72d) | 2010-09-27 → 2010-12-14 (+78d) | 1d? → 5d | 0% → 75% | 66d → 0d |  | constraint none → must start on 2010-12-08; resources none → Eric |
| 77 | Submission Reports | 2010-09-27 → 2010-12-15 (+79d) | 2010-09-27 → 2010-12-15 (+79d) | 1d? → 1d |  | 66d → 18d | none → 76 | resources none → Eric |
| 78 | Remote Search | 2010-09-27 → 2010-12-16 (+80d) | 2010-09-27 → 2010-12-16 (+80d) | 1d? → 1d |  | 66d → 18d | none → 77 | resources none → Eric |
| 79 | Cedara | 2010-09-27 → 2010-12-08 (+72d) | 2010-09-27 → 2010-12-09 (+73d) | 1d? → 2d |  | 66d → 0d |  | constraint none → must start on 2010-12-08; resources none → Qinyan |
| 80 | QC Tool | 2010-09-27 → 2010-12-10 (+74d) | 2010-09-27 → 2010-12-13 (+77d) | 1d? → 2d |  | 66d → 13d | none → 79 | resources none → Qinyan |
| 81 | Shared List | 2010-09-27 → 2010-12-14 (+78d) | 2010-09-27 → 2010-12-17 (+81d) | 1d? → 4d |  | 66d → 13d | none → 80 | resources none → Qinyan |
| 82 | Collection Description | 2010-09-27 → 2010-12-20 (+84d) | 2010-09-27 → 2010-12-23 (+87d) | 1d? → 4d |  | 66d → 13d | none → 81 | resources none → Qinyan |
| 83 | Dynamic Search | 2010-09-27 → 2010-12-08 (+72d) | 2010-09-27 → 2010-12-10 (+74d) | 1d? → 3d |  | 66d → 0d |  | constraint none → must start on 2010-12-08; resources none → Jim |
| 84 | CTP | 2010-09-27 → 2010-12-13 (+77d) | 2010-09-27 → 2010-12-15 (+79d) | 1d? → 3d |  | 66d → 13d | none → 83 | resources none → Jim |
| 85 | Database Adapter | 2010-09-27 → 2010-12-16 (+80d) | 2010-09-27 → 2010-12-20 (+84d) | 1d? → 3d |  | 66d → 13d | none → 84 | resources none → Jim |
| 86 | Deletion | 2010-09-27 → 2010-12-21 (+85d) | 2010-09-27 → 2010-12-23 (+87d) | 1d? → 3d |  | 66d → 13d | none → 85 | resources none → Jim |
| 87 | Saved Query | 2010-09-27 → 2010-12-09 (+73d) | 2010-09-27 → 2010-12-13 (+77d) | 1d? → 3d |  | 66d → 0d |  | constraint none → must start on 2010-12-09; resources none → Prakash |
| 88 | Data Basket | 2010-09-27 → 2010-12-14 (+78d) | 2010-09-27 → 2010-12-16 (+80d) | 1d? → 3d |  | 66d → 11d | none → 87 | resources none → Prakash |
| 89 | HTTP/FTP Download | 2010-09-27 → 2010-12-17 (+81d) | 2010-09-27 → 2010-12-21 (+85d) | 1d? → 3d |  | 66d → 11d | none → 88 | resources none → Prakash |
| 97 | **Ultrasound Search Revisited Part 3 (branch)** | 2010-12-06 A → 2010-12-06 | 2011-01-07 → 2011-01-10 (+3d) | 19d → 24d | 15% → 0% | 0d → 3d |  |  |
| 98 | Customize Classic Search UI to include US fields | 2010-12-06 A → 2011-01-03 (+28d) | 2010-12-10 → 2011-01-07 (+28d) |  | 50% → 0% | 13d → 0d |  | constraint none → must start on 2011-01-03 |
| 99 | Update submission module to index tags | 2010-12-07 A → 2010-12-06 (-1d) | 2010-12-13 → 2010-12-10 (-3d) |  | 20% → 0% | 0d → 9d |  |  |
| 100 | Add fields to dynamic search | 2010-12-13 → 2011-01-10 (+28d) | 2010-12-13 → 2011-01-10 (+28d) |  |  | 13d → 3d |  |  |
| 101 | **Update search to include ultrasound tags** | 2010-12-14 → 2010-12-13 (-1d) | 2010-12-23 → 2010-12-22 (-1d) |  |  | 0d → 9d |  |  |
| 102 | Code | 2010-12-14 → 2010-12-13 (-1d) | 2010-12-20 → 2010-12-17 (-3d) |  |  | 0d → 9d |  |  |
| 103 | Unit Test | 2010-12-21 → 2010-12-20 (-1d) | 2010-12-23 → 2010-12-22 (-1d) |  |  | 0d → 9d |  |  |
| 104 | Remote Search impact | 2011-01-03 → 2010-12-23 (-11d) | 2011-01-07 → 2010-12-31 (-7d) |  |  | 0d → 9d |  |  |
| 105 | **AIM Search Prototype Part 2** | 2010-12-13 A → 2011-01-03 (+21d) | 2010-12-20 → 2011-01-13 (+24d) | 5d → 9d | 8% → 0% | 8.5d → 0d |  |  |
| 106 | Data Access (domain, and DAO) | 2010-12-14 A → 2011-01-03 (+20d) | 2010-12-16 → 2011-01-05 (+20d) |  | 25% → 0% | 10d → 0d |  | constraint none → must start on 2011-01-03 |
| 107 | Connect Search UI to backend | 2010-12-13 → 2011-01-06 (+24d) | 2010-12-20 → 2011-01-12 (+23d) |  |  | 8.5d → 0d | 71 → 106 |  |
| 108 | AIM de-identification configuration | 2010-12-13 → 2011-01-13 (+31d) | 2010-12-14 → 2011-01-13 (+30d) |  |  | 12.5d → 0d | 71 → 107 |  |

## Version 7 (saved 2010-12-14)

Note of the change: update sanity task complete

Last finish stays 2011-01-13. Complete tasks 48 → 55.

Added:

| ID | Task | Duration | Start | Finish | Constraint | Resources |
| --- | --- | --- | --- | --- | --- | --- |
| 79 | Aggregate documentation | 2d | 2010-12-29 | 2010-12-30 | must start on 2010-12-29 | Eric |
| 80 | Ultrasound leftovers | 3d | 2010-12-08 A | 2010-12-10 A | must start on 2010-12-08 | Qinyan |

Changed:

| ID | Task | Start | Finish | Duration | Complete | Total float | Predecessors | Other |
| --- | --- | --- | --- | --- | --- | --- | --- | --- |
| 33 | **NBIA 5.0** |  |  |  | 88% → 95% |  |  |  |
| 43 | NBIA 5.0 Staging | 2010-12-13 A | 2010-12-13 A |  | 0% → 100% | 0d → none |  |  |
| 44 | Sanity Regression against staging | 2010-12-13 A | 2010-12-13 → 2010-12-14 A (+1d) |  | 0% → 100% | -1d → none |  |  |
| 45 | Order AppScan on staging | 2010-12-13 → 2010-12-14 A (+1d) | 2010-12-13 → 2010-12-14 A (+1d) | 0d → 1h | 0% → 100% | 0d → none |  | constraint must start on 2010-12-13 → start no earlier than 2010-12-14 |
| 46 | Migrate production MySQL -> Oracle | 2010-12-13 A |  |  | 0% → 50% |  |  |  |
| 55 | **External Model Harmonization** | 2010-09-27 A → 2010-11-29 A (+63d) |  | 49d → 6d |  |  |  |  |
| 56 | CBIIT Self-Study on DSR,metadata,etc. pt 1 | 2010-09-27 A → 2010-11-29 A (+63d) | 2010-09-28 A → 2010-11-30 A (+63d) |  |  |  |  |  |
| 75 | **Transition Documentation** |  | 2010-12-29 → 2010-12-30 (+1d) | 14d → 15d | 9% → 36% | 11d → 10d |  |  |
| 81 | Cedara | 2010-12-08 → 2010-12-09 A (+1d) | 2010-12-09 → 2010-12-13 A (+4d) | 2d → 3d | 0% → 100% | 0d → none | none → 80 | constraint must start on 2010-12-08 → none |
| 82 | QC Tool | 2010-12-10 → 2010-12-14 (+4d) | 2010-12-13 → 2010-12-15 (+2d) |  |  | 13d → 6911d |  |  |
| 83 | Shared List | 2010-12-14 → 2010-12-16 (+2d) | 2010-12-17 → 2010-12-21 (+4d) |  |  | 13d → 6911d |  |  |
| 84 | Collection Description | 2010-12-20 → 2010-12-22 (+2d) | 2010-12-23 → 2010-12-29 (+6d) |  |  | 13d → 6911d |  |  |
| 85 | CTP | 2010-12-13 → 2010-12-08 A (-5d) | 2010-12-15 → 2010-12-14 A (-1d) | 3d → 5d | 0% → 100% | 13d → none | 87 → none | constraint none → must start on 2010-12-08 |
| 86 | Database Adapter | 2010-12-16 → 2010-12-15 A (-1d) | 2010-12-20 → 2010-12-17 (-3d) |  | 0% → 30% | 13d → 11d |  |  |
| 87 | Dynamic Search | 2010-12-08 → 2010-12-20 (+12d) | 2010-12-10 → 2010-12-22 (+12d) |  |  | 0d → 11d | none → 86 | constraint must start on 2010-12-08 → none |
| 88 | Deletion | 2010-12-21 → 2010-12-23 (+2d) | 2010-12-23 → 2010-12-29 (+6d) |  |  | 13d → 11d | 86 → 87 |  |
| 89 | Saved Query | 2010-12-09 A | 2010-12-13 A |  | 0% → 100% | 0d → none |  |  |
| 94 | Eric (11/26,12/13, 12/20 - 12/28, 12/31 ) |  |  |  |  |  |  | was named Eric (11/26,12/13, 12/20 - ? ) |
| 95 | Jim (11/26, 12/24, 12/30-12/31) |  |  |  |  |  |  | was named Jim (11/26, 12/27-12/31) |
| 96 | Qinyan (11/26, 12/24, 12/31) |  |  |  |  |  |  | was named Qinyan (11/26, 12/27-12/31) |

## Version 8 (saved 2010-12-17)

Note of the change: update % complete

Last finish 2011-01-13 → 2011-01-26 (+13d). Complete tasks 55 → 57.

Removed: 77 Submission Reports; 78 Remote Search

Changed:

| ID | Task | Start | Finish | Duration | Complete | Total float | Other |
| --- | --- | --- | --- | --- | --- | --- | --- |
| 33 | **NBIA 5.0** |  | 2010-12-16 → 2010-12-17 (+1d) | 23d? → 24d? | 95% → 98% |  |  |
| 46 | Migrate production MySQL -> Oracle |  | 2010-12-15 A |  | 50% → 100% | 0d → none |  |
| 47 | NBIA 5.0 Production | 2010-12-16 → 2010-12-17 (+1d) | 2010-12-16 → 2010-12-17 (+1d) |  |  |  | constraint must start on 2010-12-16 → must start on 2010-12-17 |
| 75 | **Transition Documentation** |  |  |  | 36% → 48% | 10d → 6910d |  |
| 84 | Database Adapter |  |  |  | 30% → 95% |  |  |
| 88 | Data Basket | 2010-12-14 A | 2010-12-16 A |  | 0% → 100% | 11d → none |  |
| 89 | HTTP/FTP Download | 2010-12-17 A |  |  | 0% → 10% |  |  |
| 97 | **Ultrasound Search Revisited Part 3 (branch)** | 2010-12-06 → 2011-01-03 (+28d) | 2011-01-10 → 2011-01-26 (+16d) | 24d → 18d |  | 3d → 0d |  |
| 99 | Update submission module to index tags | 2010-12-06 → 2011-01-03 (+28d) | 2010-12-10 → 2011-01-07 (+28d) |  |  | 6909d → 0d | constraint none → must start on 2011-01-03 |
| 101 | **Update search to include ultrasound tags** | 2010-12-13 → 2011-01-10 (+28d) | 2010-12-22 → 2011-01-19 (+28d) |  |  | 9d → 0d |  |
| 102 | Code | 2010-12-13 → 2011-01-10 (+28d) | 2010-12-17 → 2011-01-14 (+28d) |  |  | 6909d → 0d |  |
| 103 | Unit Test | 2010-12-20 → 2011-01-17 (+28d) | 2010-12-22 → 2011-01-19 (+28d) |  |  | 6909d → 0d |  |
| 104 | Remote Search impact | 2010-12-23 → 2011-01-20 (+28d) | 2010-12-31 → 2011-01-26 (+26d) |  |  | 6909d → 0d |  |

## Version 9 (saved 2010-12-29)

Note of the change: add percentage of the working status

Last finish stays 2011-01-26. Complete tasks 57 → 60.

Changed:

| ID | Task | Start | Finish | Complete | Total float |
| --- | --- | --- | --- | --- | --- |
| 75 | **Transition Documentation** |  |  | 48% → 60% |  |
| 84 | Database Adapter |  | 2010-12-17 A | 95% → 100% | 11d → none |
| 85 | Dynamic Search | 2010-12-20 A | 2010-12-22 A | 0% → 100% | 11d → none |
| 86 | Deletion | 2010-12-23 A | 2010-12-29 A | 0% → 100% | 11d → none |

## Version 10 (saved 2010-12-30)

Note of the change: update percentages

Last finish stays 2011-01-26. Complete tasks 60 → 67.

Added:

| ID | Task | Duration | Start | Finish | Predecessors | Constraint | Resources |
| --- | --- | --- | --- | --- | --- | --- | --- |
| 109 | NIAMS 4.5 Deployment | 1d? | 2011-01-03 | 2011-01-03 |  | start no earlier than 2011-01-03 | Eric |
| 110 | NIAMS 5.0 Deployment | 1d? | 2011-01-04 | 2011-01-04 | 109 |  | Eric |

Changed:

| ID | Task | Start | Finish | Complete | Total float |
| --- | --- | --- | --- | --- | --- |
| 75 | **Transition Documentation** |  | 2010-12-30 A | 60% → 100% | 6910d → none |
| 76 | Grid Service |  | 2010-12-14 A | 75% → 100% | 0d → none |
| 77 | Aggregate documentation | 2010-12-29 A | 2010-12-30 A | 0% → 100% | 0d → none |
| 80 | QC Tool | 2010-12-14 A | 2010-12-15 A | 0% → 100% | 6911d → none |
| 81 | Shared List | 2010-12-16 A | 2010-12-21 A | 0% → 100% | 6911d → none |
| 82 | Collection Description | 2010-12-22 A | 2010-12-29 A | 0% → 100% | 6911d → none |
| 89 | HTTP/FTP Download |  | 2010-12-21 A | 10% → 100% | 11d → none |
| 90 | Download Mgr | 2010-12-22 A | 2010-12-29 A | 0% → 100% | 11d → none |

## Version 11 (saved 2011-01-11)

Note of the change: update with new tasks for 3 month extension

Last finish 2011-01-26 → 2011-04-01 (+65d). Complete tasks 67 → 68.

Added:

| ID | Task | Duration | Start | Finish | Predecessors | Constraint | Resources |
| --- | --- | --- | --- | --- | --- | --- | --- |
| 97 | SAIC stuff | 1w | 2011-01-03 | 2011-01-07 |  | must start on 2011-01-03 | Eric; Qinyan; Prakash |
| 98 | **Bugs (post 5.0)** | 2d | 2011-01-10 A | 2011-01-11 |  |  |  |
| 99 | Deleting > 1000 series when they are referenced by shared list causes exception | 2d | 2011-01-10 A | 2011-01-11 |  | must start on 2011-01-10 | Jim |
| 101 | Merge branch into trunk | 1d | 2011-01-10 A | 2011-01-10 A | 97 |  | Qinyan |
| 108 | Cut tag for QA | 1h | 2011-01-28 | 2011-01-28 | 107 |  |  |
| 110 | **Local** | 10d | 2011-01-11 A | 2011-01-24 |  |  |  |
| 114 | Evaluate/Demo | 1d | 2011-01-24 | 2011-01-24 | 113 |  |  |
| 115 | **Remote** | 20d | 2011-01-25 | 2011-02-21 |  |  |  |
| 116 | Stand up AIM instance | 1w | 2011-01-25 | 2011-01-31 | 114 |  | Eric |
| 117 | Design | 1w | 2011-02-01 | 2011-02-07 | 116 |  | Eric |
| 118 | Implement | 2w | 2011-02-08 | 2011-02-21 | 117 |  | Eric |
| 119 | caGrid 1.4/CQL 2.0 exploration | 1mo | 2011-01-20 | 2011-02-16 | 103 |  | Jim |
| 122 | NBIA 5.0 patch release and/or 5.1? | 1d | 2010-09-27 | 2010-09-27 |  |  | Eric |
| 123 | LSDAM, BRIDG support | 3mo | 2011-01-10 | 2011-04-01 |  | must start on 2011-01-10 | Eric2; Prakash2 |
| 124 | Transition | 23d | 2011-03-01 | 2011-03-31 |  | must start on 2011-03-01 | Eric; Qinyan; Prakash; Jim |

Removed: 98 Customize Classic Search UI to include US fields

Changed:

| ID | Task | Start | Finish | Duration | Complete | Total float | Predecessors | Other |
| --- | --- | --- | --- | --- | --- | --- | --- | --- |
| 100 | **Ultrasound Search Revisited Part 3 (branch)** | 2011-01-03 → 2011-01-10 A (+7d) | 2011-01-26 → 2011-01-28 (+2d) | 18d → 14.12d | 0% → 17% | 0d → 45.88d |  |  |
| 102 | Update submission module to index tags | 2011-01-03 → 2011-01-12 (+9d) | 2011-01-07 → 2011-01-18 (+11d) |  |  | 0d → 32d | 31 → 101, 99 | constraint must start on 2011-01-03 → none |
| 103 | Add fields to dynamic search | 2011-01-10 → 2011-01-19 (+9d) | 2011-01-10 → 2011-01-19 (+9d) |  |  | 12d → 32d | Customize Classic Search UI to include US fields → 102 |  |
| 104 | **Update search to include ultrasound tags** | 2011-01-10 → 2011-01-11 A (+1d) | 2011-01-19 → 2011-01-20 (+1d) |  | 0% → 31% | 0d → 45.88d |  |  |
| 105 | Code | 2011-01-10 → 2011-01-11 A (+1d) | 2011-01-14 → 2011-01-17 (+3d) |  | 0% → 50% | 0d → 45.88d | 102 → 101 |  |
| 106 | Unit Test | 2011-01-17 → 2011-01-18 (+1d) | 2011-01-19 → 2011-01-20 (+1d) |  |  | 0d → 45.88d |  |  |
| 107 | Remote Search impact | 2011-01-20 → 2011-01-21 (+1d) | 2011-01-26 → 2011-01-27 (+1d) |  |  | 0d → 45.88d |  |  |
| 109 | **AIM Search Prototype Part 2** | 2011-01-03 → 2011-01-11 A (+8d) | 2011-01-13 → 2011-02-21 (+39d) | 9d → 30d | 0% → 7% | 0d → 29d |  |  |
| 111 | Data Access (domain, and DAO) | 2011-01-03 → 2011-01-11 A (+8d) | 2011-01-05 → 2011-01-13 (+8d) |  | 0% → 25% |  | 74 → 97 | constraint must start on 2011-01-03 → must start on 2011-01-11 |
| 112 | Connect Search UI to backend | 2011-01-06 → 2011-01-14 A (+8d) | 2011-01-12 → 2011-01-20 (+8d) |  | 0% → 25% | 9d → 29d |  |  |
| 113 | AIM de-identification configuration | 2011-01-13 → 2011-01-21 (+8d) | 2011-01-13 → 2011-01-21 (+8d) |  |  | 9d → 29d |  |  |
| 120 | NIAMS 4.5 Deployment | 2011-01-03 → 2010-09-27 (-98d) | 2011-01-03 → 2010-09-27 (-98d) | 1d? → 1d |  | 16d → 130d |  | constraint start no earlier than 2011-01-03 → none |
| 121 | NIAMS 5.0 Deployment | 2011-01-04 → 2010-09-27 (-99d) | 2011-01-04 → 2010-10-06 (-90d) | 1d? → 1.5w |  | 16d → 123.5d | 120 → none |  |

## Version 12 (saved 2011-01-18)

Note of the change: add bug

Last finish stays 2011-04-01. Complete tasks 68 → 72.

Added:

| ID | Task | Duration | Start | Finish | Predecessors | Constraint | Resources |
| --- | --- | --- | --- | --- | --- | --- | --- |
| 100 | Shared List creation can fail when greater than 1000 series elements | 2d | 2011-01-12 A | 2011-01-13 A | 99 |  | Jim |
| 118 | DB migration | 1w | 2011-01-24 | 2011-01-28 | 113 |  | Eric |
| 119 | Deploy | 4h | 2011-01-31 | 2011-01-31 | 118 |  | Eric |
| 120 | NIAMS 4.5 Deployment - Prod | 4h | 2011-01-24 | 2011-01-24 | 116 |  | Eric |
| 121 | **NIAMS 5.0 Deployment - Prod** | 5.5d | 2011-01-25 | 2011-02-01 |  |  |  |
| 122 | DB migration | 1w | 2011-01-25 | 2011-01-31 | 120 |  | Eric |
| 123 | Deploy | 4h | 2011-02-01 | 2011-02-01 | 122 |  | Eric |
| 126 | QA Testing | 2w | 2011-01-24 | 2011-02-07 | 125 |  | Quy |
| 127 | Deploy | 4h | 2011-02-08 | 2011-02-08 | 126 | must start on 2011-02-08 | Eric |
| 128 | NBIA 5.0.1 Production | 4h | 2011-02-15 | 2011-02-15 | 125 | must start on 2011-02-15 | Eric |

Removed: 115 Remote; 116 Stand up AIM instance; 117 Design; 118 Implement

Changed:

| ID | Task | Start | Finish | Duration | Complete | Total float | Predecessors | Other |
| --- | --- | --- | --- | --- | --- | --- | --- | --- |
| 97 | SAIC stuff | 2011-01-03 A | 2011-01-07 A |  | 0% → 100% | 0d → none |  |  |
| 98 | **Bugs (post 5.0)** |  | 2011-01-11 → 2011-01-13 A (+2d) | 2d → 4d | 50% → 100% | 0d → none |  |  |
| 99 | Deleting > 1000 series when they are referenced by shared list causes exception |  | 2011-01-11 A |  | 50% → 100% | 0d → none |  |  |
| 101 | **Ultrasound Search Revisited Part 3 (branch)** |  | 2011-01-28 → 2011-01-27 (-1d) | 14.12d → 14d | 17% → 38% | 45.88d → 46d |  |  |
| 103 | Update submission module to index tags | 2011-01-12 A |  |  | 0% → 50% |  |  |  |
| 105 | **Update search to include ultrasound tags** |  |  |  | 31% → 50% | 45.88d → 46d |  |  |
| 106 | Code |  |  |  | 50% → 80% | 45.88d → 46d |  |  |
| 109 | **AIM Search Prototype Part 2** |  | 2011-02-21 → 2011-01-24 (-28d) | 30d → 10d | 7% → 55% | 29d → 49d |  |  |
| 110 | **Local** |  |  |  | 20% → 55% | 29d → 49d |  |  |
| 111 | Data Access (domain, and DAO) |  | 2011-01-13 A |  | 25% → 100% | 0d → none |  |  |
| 112 | Connect Search UI to backend |  |  |  | 25% → 50% | 29d → 44.5d |  |  |
| 116 | NIAMS 4.5 Deployment - Staging | 2010-09-27 → 2011-01-24 (+119d) | 2010-09-27 → 2011-01-24 (+119d) | 1d → 4h |  | 130d → 43.5d |  | was named NIAMS 4.5 Deployment; constraint none → start no earlier than 2011-01-24 |
| 117 | **NIAMS 5.0 Deployment - Staging** | 2010-09-27 → 2011-01-24 (+119d) | 2010-10-06 → 2011-01-31 (+117d) | 1.5w → 5.5d |  | 123.5d → 44.5d |  | was named NIAMS 5.0 Deployment; resources Eric → none |
| 124 | **NBIA 5.0.1 Staging** | 2010-09-27 → 2011-01-24 (+119d) | 2010-09-27 → 2011-02-08 (+134d) | 1d → 11.5d |  | 130d → 0d |  | was named NBIA 5.0 patch release and/or 5.1?; resources Eric → none |
| 125 | Cut tag for QA | 2011-01-28 → 2011-01-24 (-4d) | 2011-01-28 → 2011-01-24 (-4d) |  |  | 45.88d → 0.88d | 108 → none | constraint none → start no earlier than 2011-01-24; resources none → Eric |

## Version 13 (saved 2011-01-20)

Note of the change: update percentage

Last finish stays 2011-04-01. Complete tasks 72 → 73.

Added:

| ID | Task | Duration | Start | Finish | Predecessors | Resources |
| --- | --- | --- | --- | --- | --- | --- |
| 109 | **Test** | 15d | 2011-01-28 | 2011-02-17 |  |  |
| 110 | Develop Functional Test Plans | 1w | 2011-01-28 | 2011-02-03 | 108 | Qinyan |
| 111 | Execute Tests | 2w | 2011-02-04 | 2011-02-17 | 110 | Qinyan |

Changed:

| ID | Task | Start | Finish | Duration | Complete | Total float |
| --- | --- | --- | --- | --- | --- | --- |
| 101 | **Ultrasound Search Revisited Part 3 (branch)** |  | 2011-01-27 → 2011-02-17 (+21d) | 14d → 29d | 38% → 21% | 46d → 31d |
| 112 | **AIM Search Prototype Part 2** |  |  |  | 55% → 78% |  |
| 113 | **Local** |  |  |  | 55% → 78% |  |
| 115 | Connect Search UI to backend |  |  |  | 50% → 75% | 44.5d → 51d |
| 116 | AIM de-identification configuration | 2011-01-21 A | 2011-01-21 A |  | 0% → 100% | 44.5d → none |

## Version 14 (saved 2011-01-24)

Note of the change: wip

Last finish stays 2011-04-01. Complete tasks 73 → 80.

Added:

| ID | Task | Duration | Start | Finish | Predecessors | Constraint | Resources |
| --- | --- | --- | --- | --- | --- | --- | --- |
| 101 | **Misc 5.1 Issues** | 7d | 2011-01-24 | 2011-02-01 |  |  |  |
| 102 | [NBIA-275] Merge Modality Description Feature | 1d | 2011-01-24 | 2011-01-24 |  | must start on 2011-01-24 | Prakash |
| 103 | [NBIA-286] Merge FTP logging bug fix | 1d | 2011-01-25 | 2011-01-25 | 102 |  | Prakash |
| 104 | [NBIA-324] CQL that targets TrialDataProvenance will not return desired result set | 1w | 2011-01-26 | 2011-02-01 | 103 |  | Prakash |
| 123 | Install caGrid 1.4 | 1d | 2011-01-25 A | 2011-01-26 A | 108 |  | Jim |
| 124 | Regenerate NCIACoreService | 1w | 2011-01-26 | 2011-02-02 | 123 |  | Jim |
| 125 | Research differences between CQL 2.0 and 1.x | 1d? | 2011-02-02 | 2011-02-03 | 124 |  | Prakash |
| 126 | Explore | 3w | 2011-02-03 | 2011-02-24 | 125 |  | Jim |
| 127 | **NIAMS Deployments** | 7.5d | 2011-01-24 A | 2011-02-02 |  |  |  |
| 136 | **NBIA 5.0.1** | 16.5d | 2011-01-24 A | 2011-02-15 |  |  |  |

Changed:

| ID | Task | Start | Finish | Duration | Complete | Total float | Predecessors | Other |
| --- | --- | --- | --- | --- | --- | --- | --- | --- |
| 105 | **Ultrasound Search Revisited Part 3 (branch)** |  | 2011-02-17 → 2011-02-24 (+7d) | 29d → 34d | 21% → 44% | 31d → 26d |  |  |
| 107 | Update submission module to index tags |  | 2011-01-18 → 2011-01-20 A (+2d) | 1w → 7d | 50% → 100% | 32d → none |  |  |
| 108 | Add fields to dynamic search | 2011-01-19 A | 2011-01-19 → 2011-01-25 A (+6d) | 1d → 3d | 0% → 100% | 32d → none |  |  |
| 109 | **Update search to include ultrasound tags** |  | 2011-01-20 A |  | 50% → 100% | 31d → none |  |  |
| 110 | Code |  | 2011-01-17 A |  | 80% → 100% | 31d → none |  |  |
| 111 | Unit Test | 2011-01-18 A | 2011-01-20 A |  | 0% → 100% | 46d → none |  |  |
| 112 | Remote Search impact | 2011-01-21 A | 2011-01-27 → 2011-02-03 (+7d) | 1w → 2w | 0% → 5% | 46d → 26d |  |  |
| 113 | **Test** | 2011-01-28 → 2011-02-04 (+7d) | 2011-02-17 → 2011-02-24 (+7d) |  |  | 31d → 26d |  |  |
| 114 | Develop Functional Test Plans | 2011-01-28 → 2011-02-04 (+7d) | 2011-02-03 → 2011-02-10 (+7d) |  |  | 31d → 26d |  |  |
| 115 | Execute Tests | 2011-02-04 → 2011-02-11 (+7d) | 2011-02-17 → 2011-02-24 (+7d) |  |  | 31d → 26d |  |  |
| 116 | **AIM Search Prototype Part 2** |  |  |  | 78% → 90% |  |  |  |
| 117 | **Local** |  |  |  | 78% → 90% |  |  |  |
| 119 | Connect Search UI to backend |  | 2011-01-20 A |  | 75% → 100% | 51d → none |  |  |
| 122 | **caGrid 1.4/CQL 2.0 exploration** | 2011-01-20 → 2011-01-25 A (+5d) | 2011-02-16 → 2011-02-24 (+8d) | 1mo → 22d? | 0% → 5% | 32d → 26.75d | 108 → none | resources Jim → none |
| 129 | **NIAMS 5.0 Deployment - Staging** | 2011-01-24 A | 2011-01-31 → 2011-02-02 (+2d) | 5.5d → 7.5d | 0% → 18% | 44.5d → 0d |  |  |
| 130 | DB migration | 2011-01-24 A |  |  | 0% → 20% | 44.5d → 2d |  |  |
| 131 | Deploy | 2011-01-31 → 2011-02-02 (+2d) | 2011-01-31 → 2011-02-02 (+2d) |  |  | 44.5d → 0d |  | constraint none → must start on 2011-02-02 |
| 137 | **NBIA 5.0.1 Staging** | 2011-01-24 A |  |  | 0% → 1% |  |  |  |
| 138 | Cut tag for QA | 2011-01-24 A | 2011-01-24 A |  | 0% → 100% | 0.88d → none |  |  |

## Version 15 (saved 2011-01-25)

Note of the change: update status

Last finish stays 2011-04-01. Complete tasks 80 → 84.

Added:

| ID | Task | Duration | Start | Finish | Predecessors | Resources |
| --- | --- | --- | --- | --- | --- | --- |
| 105 | [NBIA-326] getNumberOfStudyTimePointForPatient returns cryptic error when Patient ID is not found. | 1w | 2011-02-02 | 2011-02-08 | 104 | Prakash |
| 106 | [NBIA-320] Please add a true select all feature to the QC tool | 1w | 2011-02-09 | 2011-02-15 | 105 | Prakash |
| 107 | [NBIA-224 ] Remove storage service port number from the config file installer property files | 1w | 2011-02-16 | 2011-02-22 | 106 | Prakash |
| 117 | Update Requirements | 3d | 2011-02-04 | 2011-02-08 | 115 | Qinyan |

Changed:

| ID | Task | Start | Finish | Duration | Complete | Total float | Predecessors | Other |
| --- | --- | --- | --- | --- | --- | --- | --- | --- |
| 101 | **Misc 5.1 Issues** | 2011-01-24 A | 2011-02-01 → 2011-02-22 (+21d) | 7d → 22d | 0% → 9% | 0d → 28d |  |  |
| 102 | [NBIA-275] Merge Modality Description Feature | 2011-01-24 A | 2011-01-24 A |  | 0% → 100% | 0d → none |  |  |
| 103 | [NBIA-286] Merge FTP logging bug fix | 2011-01-25 A | 2011-01-25 A |  | 0% → 100% | 43d → none |  |  |
| 108 | **Ultrasound Search Revisited Part 3 (branch)** |  | 2011-02-24 → 2011-03-01 (+5d) | 34d → 37d | 44% → 43% | 26d → 23d |  |  |
| 115 | Remote Search impact |  |  |  | 5% → 10% | 26d → 23d |  |  |
| 116 | **Test** |  | 2011-02-24 → 2011-03-01 (+5d) | 15d → 18d |  | 26d → 23d |  |  |
| 118 | Develop Functional Test Plans | 2011-02-04 → 2011-02-09 (+5d) | 2011-02-10 → 2011-02-15 (+5d) |  |  | 26d → 23d | 115 → 117 |  |
| 119 | Execute Tests | 2011-02-11 → 2011-02-16 (+5d) | 2011-02-24 → 2011-03-01 (+5d) |  |  | 26d → 23d |  |  |
| 120 | **AIM Search Prototype Part 2** |  | 2011-01-24 A | 10d → 9.12d | 90% → 100% | 49d → none |  |  |
| 121 | **Local** |  | 2011-01-24 A | 10d → 9.12d | 90% → 100% | 49d → none |  |  |
| 125 | Evaluate/Demo | 2011-01-24 A | 2011-01-24 A | 1d → 1h | 0% → 100% | 49d → none |  | resources none → Eric |
| 126 | **caGrid 1.4/CQL 2.0 exploration** |  | 2011-02-24 → 2011-03-01 (+5d) | 22d? → 25d | 5% → 4% | 26.75d → 23.75d |  |  |
| 129 | Research differences between CQL 2.0 and 1.x |  | 2011-02-03 → 2011-02-09 (+6d) | 1d? → 1w |  | 26.75d → 23.75d |  | resources Prakash → Jim |
| 130 | Do something based upon research into caGrid 1.4/CQL 2.0 | 2011-02-03 → 2011-02-09 (+6d) | 2011-02-24 → 2011-03-01 (+5d) | 3w → 14d |  | 26.75d → 23.75d |  | was named Explore |
| 131 | **NIAMS Deployments** |  | 2011-02-02 → 2011-02-28 (+26d) | 7.5d → 26d | 8% → 13% | 42.5d → 24d |  |  |
| 132 | NIAMS 4.5 Deployment - Staging | 2011-01-24 A | 2011-01-24 A |  | 0% → 100% | 43.5d → none |  |  |
| 136 | NIAMS 4.5 Deployment - Prod | 2011-01-24 → 2011-02-21 (+28d) | 2011-01-24 → 2011-02-21 (+28d) |  |  | 43.5d → 0d |  | constraint none → must start on 2011-02-21 |
| 137 | **NIAMS 5.0 Deployment - Prod** | 2011-01-25 → 2011-02-21 (+27d) | 2011-02-01 → 2011-02-28 (+27d) |  |  | 43.5d → 24d |  |  |
| 138 | DB migration | 2011-01-25 → 2011-02-21 (+27d) | 2011-01-31 → 2011-02-28 (+28d) |  |  | 43.5d → 24d |  |  |
| 139 | Deploy | 2011-02-01 → 2011-02-28 (+27d) | 2011-02-01 → 2011-02-28 (+27d) |  |  | 43.5d → 24d |  |  |

## Version 16 (saved 2011-01-31)

Note of the change: update percentages

Last finish stays 2011-04-01. Complete tasks 84 → 86.

Added:

| ID | Task | Duration | Start | Finish | Predecessors | Resources |
| --- | --- | --- | --- | --- | --- | --- |
| 116 | Search Terms | 7d | 2011-01-21 A | 2011-01-31 A | 114 | Qinyan |
| 117 | Image Drill Down (Backward Compatibility) | 6d | 2011-02-01 A | 2011-02-08 | 116 | Qinyan |

Changed:

| ID | Task | Start | Finish | Duration | Complete | Total float | Predecessors | Other |
| --- | --- | --- | --- | --- | --- | --- | --- | --- |
| 101 | **Misc 5.1 Issues** |  | 2011-02-22 → 2011-03-01 (+7d) | 22d → 27d | 9% → 26% | 28d → 23d |  |  |
| 104 | [NBIA-324] CQL that targets TrialDataProvenance will not return desired result set | 2011-01-26 A | 2011-02-01 → 2011-02-08 (+7d) | 1w → 2w | 0% → 50% | 43d → 33d |  |  |
| 105 | [NBIA-326] getNumberOfStudyTimePointForPatient returns cryptic error when Patient ID is not found. | 2011-02-02 → 2011-02-09 (+7d) | 2011-02-08 → 2011-02-15 (+7d) |  |  | 38d → 33d |  |  |
| 106 | [NBIA-320] Please add a true select all feature to the QC tool | 2011-02-09 → 2011-02-16 (+7d) | 2011-02-15 → 2011-02-22 (+7d) |  |  | 33d → 28d |  |  |
| 107 | [NBIA-224 ] Remove storage service port number from the config file installer property files | 2011-02-16 → 2011-02-23 (+7d) | 2011-02-22 → 2011-03-01 (+7d) |  |  | 28d → 23d |  |  |
| 108 | **Ultrasound Search Revisited Part 3 (branch)** |  |  |  | 43% → 56% |  |  |  |
| 115 | **Remote Search impact** |  | 2011-02-03 → 2011-02-08 (+5d) | 2w → 13d | 10% → 56% |  | 112 → none | resources Qinyan → none |
| 118 | **Test** | 2011-02-04 → 2011-02-09 (+5d) |  | 18d → 15d |  |  |  |  |
| 119 | Update Requirements | 2011-02-04 → 2011-02-09 (+5d) | 2011-02-08 → 2011-02-11 (+3d) |  |  | 23d → 24d |  |  |
| 120 | Develop Functional Test Plans | 2011-02-09 → 2011-02-14 (+5d) | 2011-02-15 → 2011-02-18 (+3d) |  |  | 23d → 24d |  |  |
| 121 | Execute Tests | 2011-02-16 → 2011-02-21 (+5d) |  | 2w → 7d |  |  |  |  |
| 128 | **caGrid 1.4/CQL 2.0 exploration** |  |  |  | 4% → 24% |  |  |  |
| 130 | Generate NBIAService with caGrid 1.4 | 2011-01-26 A | 2011-02-02 A |  | 0% → 100% | 23.75d → none |  | was named Regenerate NCIACoreService |
| 132 | Migrate public metadata filter to CQL 2 |  |  |  |  |  |  | was named Do something based upon research into caGrid 1.4/CQL 2.0 |
| 133 | **NIAMS Deployments** |  |  |  | 13% → 29% |  |  |  |
| 135 | **NIAMS 5.0 Deployment - Staging** |  |  |  | 18% → 55% |  |  |  |
| 136 | DB migration |  |  |  | 20% → 60% |  |  |  |
| 142 | **NBIA 5.0.1** |  |  |  | 1% → 46% |  |  |  |
| 143 | **NBIA 5.0.1 Staging** |  |  |  | 1% → 48% |  |  |  |
| 145 | QA Testing | 2011-01-24 A |  |  | 0% → 50% |  |  |  |

## Version 17 (saved 2011-02-01)

Last finish stays 2011-04-01.

Changed:

| ID | Task | Start | Finish | Duration | Complete | Total float | Other |
| --- | --- | --- | --- | --- | --- | --- | --- |
| 108 | **Ultrasound Search Revisited Part 3 (branch)** |  | 2011-03-01 → 2011-02-28 (-1d) | 37d → 36d | 56% → 57% | 23d → 24d |  |
| 118 | **Test** |  | 2011-03-01 → 2011-02-28 (-1d) | 15d → 14d |  | 23d → 24d |  |
| 119 | Update Requirements |  | 2011-02-11 → 2011-02-10 (-1d) | 3d → 2d |  | 24d → 25d |  |
| 120 | Develop Functional Test Plans | 2011-02-14 → 2011-02-11 (-3d) | 2011-02-18 → 2011-02-17 (-1d) |  |  | 24d → 25d |  |
| 121 | Execute Tests | 2011-02-21 → 2011-02-18 (-3d) | 2011-03-01 → 2011-02-28 (-1d) |  |  | 23d → 24d |  |
| 128 | **caGrid 1.4/CQL 2.0 exploration** |  |  |  | 24% → 26% |  |  |
| 131 | Research differences between CQL 2.0 and 1.x | 2011-02-02 A |  |  | 0% → 10% |  |  |
| 133 | **NIAMS Deployments** |  |  |  | 29% → 42% |  |  |
| 135 | **NIAMS 5.0 Deployment - Staging** |  | 2011-02-02 → 2011-02-03 (+1d) | 7.5d → 8.5d | 55% → 82% | 0d → 41.5d |  |
| 136 | DB migration |  |  |  | 60% → 90% | 2d → 44.5d |  |
| 137 | Deploy | 2011-02-02 → 2011-02-03 (+1d) | 2011-02-02 → 2011-02-03 (+1d) |  |  | 0d → 41.5d | constraint must start on 2011-02-02 → start no earlier than 2011-02-03 |

## Version 18 (saved 2011-02-03)

Note of the change: update percent

Last finish stays 2011-04-01. Complete tasks 86 → 88.

Changed:

| ID | Task | Start | Finish | Duration | Complete | Total float | Predecessors |
| --- | --- | --- | --- | --- | --- | --- | --- |
| 101 | **Misc 5.1 Issues** |  | 2011-03-01 → 2011-02-24 (-5d) | 27d → 24d | 26% → 38% | 23d → 26d |  |
| 104 | [NBIA-324] CQL that targets TrialDataProvenance will not return desired result set |  | 2011-02-08 → 2011-02-03 A (-5d) | 2w → 1.4w | 50% → 100% | 33d → none |  |
| 105 | [NBIA-224 ] Remove storage service port number from the config file installer property files | 2011-02-23 → 2011-02-04 (-19d) | 2011-03-01 → 2011-02-10 (-19d) |  |  | 23d → 26d | 107 → 104 |
| 106 | [NBIA-326] getNumberOfStudyTimePointForPatient returns cryptic error when Patient ID is not found. | 2011-02-09 → 2011-02-11 (+2d) | 2011-02-15 → 2011-02-17 (+2d) |  |  | 33d → 26d | 104 → 105 |
| 107 | [NBIA-320] Please add a true select all feature to the QC tool | 2011-02-16 → 2011-02-18 (+2d) | 2011-02-22 → 2011-02-24 (+2d) |  |  | 28d → 26d |  |
| 133 | **NIAMS Deployments** |  |  |  | 42% → 57% |  |  |
| 135 | **NIAMS 5.0 Deployment - Staging** |  |  |  | 82% → 94% |  |  |
| 136 | DB migration |  | 2011-01-28 → 2011-02-02 A (+5d) | 1w → 8d | 90% → 100% | 44.5d → none |  |

## Version 19 (saved 2011-02-04)

Note of the change: update percent

Last finish stays 2011-04-01. Complete tasks 88 → 89.

Changed:

| ID | Task | Start | Finish | Duration | Complete | Total float | Other |
| --- | --- | --- | --- | --- | --- | --- | --- |
| 133 | **NIAMS Deployments** |  |  |  | 57% → 64% |  |  |
| 135 | **NIAMS 5.0 Deployment - Staging** |  | 2011-02-03 → 2011-02-04 A (+1d) | 8.5d → 10d | 94% → 100% | 41.5d → none |  |
| 137 | Deploy | 2011-02-03 A | 2011-02-03 → 2011-02-04 A (+1d) | 4h → 2d | 0% → 100% | 41.5d → none | resources Eric → Eric2 |
| 142 | **NBIA 5.0.1** |  |  |  | 46% → 36% | 0d → 33.5d |  |
| 143 | **NBIA 5.0.1 Staging** |  | 2011-02-08 → 2011-02-10 (+2d) | 11.5d → 13.62d | 48% → 38% | 0d → 36.38d |  |
| 145 | QA Testing |  | 2011-02-07 → 2011-02-10 (+3d) | 2w → 13d | 50% → 38% | 0.88d → 36.38d |  |
| 146 | Deploy | 2011-02-08 → 2011-02-10 (+2d) | 2011-02-08 → 2011-02-10 (+2d) |  |  | 0d → 36.38d | constraint must start on 2011-02-08 → none |

## Version 20 (saved 2011-02-07)

Note of the change: update status

Last finish stays 2011-04-01. Complete tasks 89 → 92.

Added:

| ID | Task | Duration | Start | Finish | Predecessors | Resources |
| --- | --- | --- | --- | --- | --- | --- |
| 133 | Public Queries | 2d | 2011-02-08 A | 2011-02-10 | 131 | Jim |
| 134 | Private Queries | 2d | 2011-02-10 | 2011-02-14 | 133 | Jim |
| 135 | Aggregation | 3d | 2011-02-14 | 2011-02-17 | 134 | Jim |
| 136 | Association Fetching | 3d | 2011-02-17 | 2011-02-22 | 135 | Jim |
| 137 | Fix any issues discovered during testing | 5d | 2011-02-22 | 2011-03-01 | 132 | Jim |

Changed:

| ID | Task | Start | Finish | Duration | Complete | Total float | Predecessors | Other |
| --- | --- | --- | --- | --- | --- | --- | --- | --- |
| 101 | **Misc 5.1 Issues** |  | 2011-02-24 → 2011-02-18 (-6d) | 24d → 20d | 38% → 50% | 26d → 30d |  |  |
| 105 | [NBIA-224 ] Remove storage service port number from the config file installer property files | 2011-02-04 A | 2011-02-10 → 2011-02-04 A (-6d) | 1w → 1d | 0% → 100% | 26d → none |  |  |
| 106 | [NBIA-320] Please add a true select all feature to the QC tool | 2011-02-18 → 2011-02-07 (-11d) | 2011-02-24 → 2011-02-11 (-13d) |  |  | 26d → 30d | 107 → 105 |  |
| 107 | [NBIA-326] getNumberOfStudyTimePointForPatient returns cryptic error when Patient ID is not found. | 2011-02-11 → 2011-02-14 (+3d) | 2011-02-17 → 2011-02-18 (+1d) |  |  | 26d → 30d | 105 → 106 |  |
| 108 | **Ultrasound Search Revisited Part 3 (branch)** |  |  |  | 57% → 70% |  |  |  |
| 115 | **Remote Search impact** |  | 2011-02-08 A |  | 56% → 100% | 24d → none |  |  |
| 117 | Image Drill Down (Backward Compatibility) |  | 2011-02-08 A |  | 5% → 100% | 24d → none |  |  |
| 119 | Update Requirements Document |  |  |  |  |  |  | was named Update Requirements |
| 128 | **caGrid 1.4/CQL 2.0 exploration** |  |  |  | 26% → 44% |  |  |  |
| 130 | Generate NBIAService with caGrid 1.4 and port metadata filter |  |  |  |  |  |  | was named Generate NBIAService with caGrid 1.4 |
| 131 | Research differences between CQL 2.0 and 1.x |  | 2011-02-09 → 2011-02-08 A (-1d) | 1w → 4d | 10% → 100% | 23.75d → none |  |  |
| 132 | **Test public data filter** | 2011-02-09 → 2011-02-08 A (-1d) | 2011-03-01 → 2011-02-22 (-7d) | 14d → 10d | 0% → 10% |  | 131 → none | was named Migrate public metadata filter to CQL 2; resources Jim → none |
| 138 | **NIAMS Deployments** |  | 2011-02-28 → 2011-03-01 (+1d) | 26d → 27d |  | 24d → 23d |  |  |
| 143 | NIAMS 4.5 Deployment - Prod | 2011-02-21 → 2011-02-22 (+1d) | 2011-02-21 → 2011-02-22 (+1d) |  |  |  |  | constraint must start on 2011-02-21 → must start on 2011-02-22 |
| 144 | **NIAMS 5.0 Deployment - Prod** | 2011-02-21 → 2011-02-22 (+1d) | 2011-02-28 → 2011-03-01 (+1d) |  |  | 24d → 23d |  |  |
| 145 | DB migration | 2011-02-21 → 2011-02-22 (+1d) | 2011-02-28 → 2011-03-01 (+1d) |  |  | 24d → 23d |  |  |
| 146 | Deploy | 2011-02-28 → 2011-03-01 (+1d) | 2011-02-28 → 2011-03-01 (+1d) |  |  | 24d → 23d |  |  |

## Version 21 (saved 2011-02-08)

Last finish stays 2011-04-01.

Changed:

| ID | Task | Complete |
| --- | --- | --- |
| 147 | **NBIA 5.0.1** | 36% → 84% |
| 148 | **NBIA 5.0.1 Staging** | 38% → 87% |
| 150 | QA Testing | 38% → 90% |

## Version 22 (saved 2011-02-10)

Note of the change: wip

Last finish stays 2011-04-01. Complete tasks 92 → 97.

Added:

| ID | Task | Duration | Start | Finish | Predecessors | Resources |
| --- | --- | --- | --- | --- | --- | --- |
| 106 | [NBIA-276] Improvement to viewing multiple pages of results | 3d | 2011-02-07 A | 2011-02-09 A | 105 | Prakash |
| 109 | [NBIA-333] Remote Search between Oracle and MySQL based NBIA node returns incorrect results for Available on NBIA date range query | 1w | 2011-02-22 | 2011-02-28 | 108 | Prakash |

Changed:

| ID | Task | Start | Finish | Duration | Complete | Total float | Predecessors |
| --- | --- | --- | --- | --- | --- | --- | --- |
| 101 | **Misc 5.1 Issues** |  | 2011-02-18 → 2011-02-28 (+10d) | 20d → 26d |  | 30d → 24d |  |
| 107 | [NBIA-320] Please add a true select all feature to the QC tool | 2011-02-07 → 2011-02-10 (+3d) | 2011-02-11 → 2011-02-16 (+5d) |  |  | 30d → 24d | 105 → 106 |
| 108 | [NBIA-326] getNumberOfStudyTimePointForPatient returns cryptic error when Patient ID is not found. | 2011-02-14 → 2011-02-17 (+3d) | 2011-02-18 → 2011-02-21 (+3d) | 1w → 3d |  | 30d → 24d |  |
| 130 | **caGrid 1.4/CQL 2.0 exploration** |  |  |  | 44% → 63% |  |  |
| 134 | **Test public data filter** |  |  |  | 10% → 58% |  |  |
| 135 | Public Queries |  | 2011-02-10 A |  | 50% → 100% | 23.75d → none |  |
| 136 | Private Queries | 2011-02-10 A | 2011-02-14 A |  | 0% → 100% | 23.75d → none |  |
| 137 | Aggregation | 2011-02-14 A |  |  | 0% → 60% |  |  |
| 149 | **NBIA 5.0.1** |  |  |  | 84% → 96% | 33.5d → 0d |  |
| 150 | **NBIA 5.0.1 Staging** |  | 2011-02-10 A |  | 87% → 100% | 36.38d → none |  |
| 152 | QA Testing |  | 2011-02-10 A |  | 90% → 100% | 36.38d → none |  |
| 153 | Deploy | 2011-02-10 A | 2011-02-10 A |  | 0% → 100% | 36.38d → none |  |
| 155 | LSDAM, BRIDG support | 2011-01-10 A |  |  | 0% → 50% |  |  |

## Version 23 (saved 2011-02-14)

Note of the change: update reality

Last finish stays 2011-04-01. Complete tasks 97 → 100.

Added:

| ID | Task | Duration | Start | Finish | Constraint | Resources |
| --- | --- | --- | --- | --- | --- | --- |
| 110 | [NBIA-337] In the view series page, highlighting of the series after adding to basket can be inconsistent | 3d | 2011-02-09 A | 2011-02-11 A | must start on 2011-02-09 | Qinyan |

Changed:

| ID | Task | Start | Finish | Duration | Complete | Total float | Predecessors |
| --- | --- | --- | --- | --- | --- | --- | --- |
| 101 | **Misc 5.1 Issues** |  | 2011-02-28 → 2011-02-25 (-3d) | 26d → 25d | 50% → 64% | 24d → 25d |  |
| 107 | [NBIA-320] Please add a true select all feature to the QC tool | 2011-02-10 A | 2011-02-16 → 2011-02-11 A (-5d) | 1w → 2d | 0% → 100% | 24d → none |  |
| 108 | [NBIA-326] getNumberOfStudyTimePointForPatient returns cryptic error when Patient ID is not found. | 2011-02-17 → 2011-02-14 (-3d) | 2011-02-21 → 2011-02-18 (-3d) | 3d → 1w |  | 24d → 25d |  |
| 109 | [NBIA-333] Remote Search between Oracle and MySQL based NBIA node returns incorrect results for Available on NBIA date range query | 2011-02-22 → 2011-02-21 (-1d) | 2011-02-28 → 2011-02-25 (-3d) |  |  | 24d → 25d |  |
| 111 | **Ultrasound Search Revisited Part 3 (branch)** |  | 2011-02-28 → 2011-03-03 (+3d) | 36d → 39d |  | 24d → 21d |  |
| 121 | **Test** | 2011-02-09 → 2011-02-14 (+5d) | 2011-02-28 → 2011-03-03 (+3d) |  |  | 24d → 21d |  |
| 122 | Update Requirements Document | 2011-02-09 → 2011-02-14 (+5d) | 2011-02-10 → 2011-02-15 (+5d) |  |  | 24d → 21d | 118 → 110 |
| 123 | Develop Functional Test Plans | 2011-02-11 → 2011-02-16 (+5d) | 2011-02-17 → 2011-02-22 (+5d) |  |  | 24d → 21d |  |
| 124 | Execute Tests | 2011-02-18 → 2011-02-23 (+5d) | 2011-02-28 → 2011-03-03 (+3d) |  |  | 24d → 21d |  |
| 131 | **caGrid 1.4/CQL 2.0 exploration** |  | 2011-03-01 → 2011-02-28 (-1d) | 25d → 24d | 63% → 65% | 23.75d → 24.75d |  |
| 135 | **Test public data filter** |  | 2011-02-22 → 2011-02-21 (-1d) | 10d → 9d | 58% → 63% | 23.75d → 24.75d |  |
| 137 | Private Queries |  | 2011-02-14 A → 2011-02-11 A (-3d) | 2d → 1d |  |  |  |
| 138 | Aggregation |  | 2011-02-17 → 2011-02-16 A (-1d) | 3d → 2d | 60% → 100% | 23.75d → none |  |
| 139 | Association Fetching | 2011-02-17 → 2011-02-16 (-1d) | 2011-02-22 → 2011-02-21 (-1d) |  |  | 23.75d → 24.75d |  |
| 140 | Fix any issues discovered during testing | 2011-02-22 → 2011-02-21 (-1d) | 2011-03-01 → 2011-02-28 (-1d) |  |  | 23.75d → 24.75d |  |

## Version 24 (saved 2011-02-15)

Last finish stays 2011-04-01. Complete tasks 100 → 101.

Added:

| ID | Task | Duration | Start | Finish | Constraint | Resources |
| --- | --- | --- | --- | --- | --- | --- |
| 156 | **SOA Training** | 3d | 2011-02-16 | 2011-02-18 |  |  |
| 157 | SOA Training (Eric) | 3d | 2011-02-16 | 2011-02-18 | must start on 2011-02-16 | Eric |
| 158 | SOA Training (Qinyan) | 3d | 2011-02-16 | 2011-02-18 | must start on 2011-02-16 | Qinyan |

Changed:

| ID | Task | Start | Finish | Duration | Complete | Total float | Other |
| --- | --- | --- | --- | --- | --- | --- | --- |
| 101 | **Misc 5.1 Issues** |  |  |  | 64% → 69% |  |  |
| 108 | [NBIA-326] getNumberOfStudyTimePointForPatient returns cryptic error when Patient ID is not found. | 2011-02-14 A |  |  | 0% → 25% |  |  |
| 111 | **Ultrasound Search Revisited Part 3 (branch)** |  | 2011-03-03 → 2011-03-01 (-2d) | 39d → 37d | 70% → 80% | 21d → 23d |  |
| 121 | **Test** | 2011-02-14 A | 2011-03-03 → 2011-03-01 (-2d) | 14d → 12d | 0% → 11% | 21d → 23d |  |
| 122 | Update Requirements Document | 2011-02-14 A |  |  | 0% → 50% | 21d → 3d |  |
| 123 | Develop Functional Test Plans | 2011-02-16 → 2011-02-21 (+5d) | 2011-02-22 → 2011-02-23 (+1d) | 1w → 3d |  | 21d → 0d | constraint none → must start on 2011-02-21 |
| 124 | Execute Tests | 2011-02-23 → 2011-02-24 (+1d) | 2011-03-03 → 2011-03-01 (-2d) | 7d → 4d |  | 21d → 23d |  |
| 131 | **caGrid 1.4/CQL 2.0 exploration** |  |  |  | 65% → 67% |  |  |
| 135 | **Test public data filter** |  |  |  | 63% → 66% |  |  |
| 139 | Association Fetching | 2011-02-16 A |  |  | 0% → 10% |  |  |
| 150 | **NBIA 5.0.1** |  | 2011-02-15 A |  | 96% → 100% | 0d → none |  |
| 155 | NBIA 5.0.1 Production | 2011-02-15 A | 2011-02-15 A |  | 0% → 100% | 0d → none |  |

## Version 25 (saved 2011-02-28)

Note of the change: update status

Last finish stays 2011-04-01. Complete tasks 101 → 111.

Added:

| ID | Task | Duration | Start | Finish | Predecessors | Constraint | Resources |
| --- | --- | --- | --- | --- | --- | --- | --- |
| 110 | [NBIA-352] Investigate - Enhance QC Tool to retrieve results piece-meal | 1w | 2011-02-24 A | 2011-03-02 | 109 |  | Prakash |
| 112 | [NBIA-339] Long-running online deletion will appear to fail because of 5 minute Apache proxy timeout (at CBIIT) | 1w | 2011-02-23 A | 2011-03-01 |  | must start on 2011-02-23 | Jim |
| 127 | [NBIA-355] Edit Query Does NOT Populate the Saved Query. | 1d | 2011-03-01 A | 2011-03-01 A | 126 |  | Qinyan |
| 128 | [NBIA-356] Slide Show is not working for Remote Ultrasound | 2d | 2011-03-02 | 2011-03-03 | 127 |  | Qinyan |

Removed: 140 Fix any issues discovered during testing

Changed:

| ID | Task | Start | Finish | Duration | Complete | Total float |
| --- | --- | --- | --- | --- | --- | --- |
| 101 | **Misc 5.1 Issues** |  | 2011-02-25 → 2011-03-02 (+5d) | 25d → 28d | 69% → 92% | 25d → 22d |
| 108 | [NBIA-326] getNumberOfStudyTimePointForPatient returns cryptic error when Patient ID is not found. |  | 2011-02-18 → 2011-02-16 A (-2d) | 1w → 3d | 25% → 100% | 25d → none |
| 109 | [NBIA-333] Remote Search between Oracle and MySQL based NBIA node returns incorrect results for Available on NBIA date range query | 2011-02-21 → 2011-02-17 A (-4d) | 2011-02-25 → 2011-02-23 A (-2d) | 1w → 5d | 0% → 100% | 25d → none |
| 113 | **Ultrasound Search Revisited Part 3 (branch)** |  | 2011-03-01 → 2011-03-03 (+2d) | 37d → 39d | 80% → 95% | 23d → 21d |
| 123 | **Test** |  | 2011-03-01 → 2011-03-03 (+2d) | 12d → 14d | 11% → 80% | 23d → 21d |
| 124 | Update Requirements Document |  | 2011-02-15 A |  | 50% → 100% | 3d → none |
| 125 | Develop Functional Test Plans | 2011-02-21 A | 2011-02-23 → 2011-02-22 A (-1d) | 3d → 2d | 0% → 100% | 0d → none |
| 126 | Execute Tests | 2011-02-24 A | 2011-03-01 → 2011-02-28 A (-1d) | 4d → 3d | 0% → 100% | 23d → none |
| 135 | **caGrid 1.4/CQL 2.0 exploration** |  | 2011-02-28 → 2011-03-01 (+1d) | 24d → 25d | 67% → 71% | 24.75d → 23.75d |
| 139 | **Test public data filter** |  | 2011-02-21 → 2011-03-01 (+8d) | 9d → 15d | 66% → 50% | 24.75d → 23.75d |
| 143 | Association Fetching |  | 2011-02-21 → 2011-03-01 (+8d) | 3d → 9d | 10% → 23% | 24.75d → 23.75d |
| 144 | **NIAMS Deployments** |  |  |  | 64% → 97% |  |
| 149 | NIAMS 4.5 Deployment - Prod | 2011-02-22 A | 2011-02-22 A |  | 0% → 100% | 0d → none |
| 150 | **NIAMS 5.0 Deployment - Prod** | 2011-02-22 A |  |  | 0% → 91% |  |
| 151 | DB migration | 2011-02-22 A | 2011-03-01 A |  | 0% → 100% | 23d → none |
| 159 | **SOA Training** | 2011-02-16 A | 2011-02-18 A |  | 0% → 100% | 0d → none |
| 160 | SOA Training (Eric) | 2011-02-16 A | 2011-02-18 A |  | 0% → 100% | 0d → none |
| 161 | SOA Training (Qinyan) | 2011-02-16 A | 2011-02-18 A |  | 0% → 100% | 0d → none |

## Version 26 (saved 2011-03-08)

Last finish stays 2011-04-01. Complete tasks 111 → 115.

Added:

| ID | Task | Duration | Start | Finish | Predecessors | Constraint | Resources |
| --- | --- | --- | --- | --- | --- | --- | --- |
| 111 | [NBIA-358] Devise prototype for classic search page that we can use to elicit requirements | 8d | 2011-03-07 A | 2011-03-16 | 110 |  | Prakash |
| 114 | **[NBIA-357] NBIA Grid Service to support AIM Object Query and Retrieval from NBIA** | 15d | 2011-03-02 A | 2011-03-22 |  |  |  |
| 115 | Clean up JDBC mess | 1w | 2011-03-02 A | 2011-03-08 | 113 |  | Jim |
| 116 | Add annotation support | 1w | 2011-03-09 | 2011-03-15 | 115 |  | Jim |
| 117 | Testing | 1w | 2011-03-16 | 2011-03-22 | 116 |  | Jim |
| 168 | Pathology Research | 3w | 2011-03-07 | 2011-03-25 |  | must start on 2011-03-07 | Qinyan |
| 169 | **NBIA 5.0.2** | 13.5d | 2011-03-08 A | 2011-03-25 |  |  |  |
| 170 | **(NIAMS) Branding** | 5d | 2011-03-08 A | 2011-03-14 |  |  | Eric |
| 171 | Implementation | 3d | 2011-03-08 A | 2011-03-10 |  | must start on 2011-03-08 | Eric |
| 172 | GUI Installer | 2d | 2011-03-11 | 2011-03-14 | 171 |  | Eric |
| 173 | QA | 1w | 2011-03-15 | 2011-03-21 | 170 |  | Quy |
| 174 | Update Installation Guide | 2d | 2011-03-15 | 2011-03-16 | 170 |  | Eric |
| 175 | NIAMS Staging Deployment | 4h | 2011-03-17 | 2011-03-17 | 174 |  |  |
| 176 | NIAMS Production Deployment | 4h | 2011-03-25 | 2011-03-25 | 175 | must start on 2011-03-25 |  |

Removed: 163 Transition

Changed:

| ID | Task | Start | Finish | Duration | Complete | Total float | Predecessors | Other |
| --- | --- | --- | --- | --- | --- | --- | --- | --- |
| 101 | **Misc 5.1 Issues** |  | 2011-03-02 → 2011-03-22 (+20d) | 28d → 42d | 92% → 71% | 22d → 8d |  |  |
| 110 | [NBIA-352] Investigate - Enhance QC Tool to retrieve results piece-meal |  | 2011-03-02 → 2011-03-04 A (+2d) | 1w → 7d | 50% → 100% | 22d → none |  |  |
| 113 | [NBIA-339] Long-running online deletion will appear to fail because of 5 minute Apache proxy timeout (at CBIIT) |  | 2011-03-01 A |  | 90% → 100% | 0d → none |  |  |
| 118 | **Ultrasound Search Revisited Part 3 (branch)** |  | 2011-03-03 → 2011-03-04 A (+1d) | 39d → 40d | 95% → 100% | 21d → none |  |  |
| 128 | **Test** |  | 2011-03-03 → 2011-03-04 A (+1d) | 14d → 15d | 80% → 100% | 21d → none |  |  |
| 133 | [NBIA-356] Slide Show is not working for Remote Ultrasound | 2011-03-02 A | 2011-03-03 → 2011-03-04 A (+1d) | 2d → 3d | 0% → 100% | 21d → none |  |  |
| 140 | **caGrid 1.4/CQL 2.0 exploration** |  |  |  | 71% → 96% |  |  |  |
| 144 | **Test public data filter** |  |  |  | 50% → 93% |  |  |  |
| 148 | Association Fetching |  |  |  | 23% → 90% |  |  |  |
| 149 | **NIAMS Deployments** |  | 2011-03-01 → 2011-03-07 A (+6d) | 27d → 30.5d | 97% → 100% | 23d → none |  |  |
| 155 | **NIAMS 5.0 Deployment - Prod** |  | 2011-03-01 → 2011-03-07 A (+6d) | 5.5d → 9d | 91% → 100% | 23d → none |  |  |
| 157 | Deploy | 2011-03-01 → 2011-03-07 A (+6d) | 2011-03-01 → 2011-03-07 A (+6d) |  | 0% → 100% | 23d → none | 156 → none | constraint none → must start on 2011-03-07 |

## Version 27 (saved 2011-03-15)

Last finish stays 2011-04-01. Complete tasks 115 → 120.

Added:

| ID | Task | Duration | Start | Finish | Predecessors | Constraint | Resources |
| --- | --- | --- | --- | --- | --- | --- | --- |
| 221 | **[NBIA-361] Cedara-AIM Automation** | 18d | 2011-03-08 A | 2011-03-31 |  |  |  |
| 222 | Research cross-platform XSLT 2.0 implementation | 5d | 2011-03-08 A | 2011-03-14 A |  | must start on 2011-03-08 | Qinyan |
| 223 | **CTP Database Adapter Enhancement** | 8d | 2011-03-15 | 2011-03-24 |  |  |  |
| 224 | Integrate XSLT transformation | 5d | 2011-03-15 | 2011-03-21 | 222 |  | Qinyan |
| 225 | Save/Update of transformed XML | 3d | 2011-03-22 | 2011-03-24 | 224 |  | Qinyan |
| 226 | Build/Deployment script changes | 1d | 2011-03-25 | 2011-03-25 | 225 |  | Qinyan |
| 227 | Testing | 4d | 2011-03-28 | 2011-03-31 | 226 |  | Qinyan |

Removed: 168 Pathology Research

Changed:

| ID | Task | Start | Finish | Duration | Complete | Total float | Predecessors | Other |
| --- | --- | --- | --- | --- | --- | --- | --- | --- |
| 134 | **Misc 5.1 Issues** |  |  |  | 71% → 91% |  |  |  |
| 144 | [NBIA-358] Devise prototype for classic search page that we can use to elicit requirements |  |  |  | 5% → 75% |  |  |  |
| 149 | **[NBIA-357] NBIA Grid Service to support AIM Object Query and Retrieval from NBIA** |  |  |  | 32% → 75% |  |  |  |
| 150 | Clean up JDBC mess |  | 2011-03-08 A |  | 95% → 100% | 8d → none |  |  |
| 151 | Add annotation support | 2011-03-09 A | 2011-03-15 A |  | 0% → 100% | 8d → none |  |  |
| 152 | Testing | 2011-03-16 A |  |  | 0% → 25% |  |  |  |
| 210 | LSDAM, BRIDG support |  |  |  | 50% → 66% |  |  |  |
| 212 | **NBIA 5.0.2** |  | 2011-03-25 → 2011-03-28 (+3d) | 13.5d → 14.5d | 12% → 38% | 5.5d → 4.5d |  |  |
| 213 | **(NIAMS) Branding** |  | 2011-03-14 A |  | 30% → 100% | 5.5d → none |  |  |
| 214 | Command-line Installer |  | 2011-03-10 A |  | 50% → 100% | 0d → none |  | was named Implementation |
| 215 | GUI Installer | 2011-03-11 A | 2011-03-14 A |  | 0% → 100% | 5.5d → none |  |  |
| 218 | NIAMS Staging Deployment | 2011-03-17 → 2011-03-23 (+6d) | 2011-03-17 → 2011-03-23 (+6d) |  |  | 5.5d → 0d | 217 → 216 | constraint none → must start on 2011-03-23 |
| 219 | NIAMS Production Deployment | 2011-03-25 → 2011-03-28 (+3d) | 2011-03-25 → 2011-03-28 (+3d) |  |  |  |  | constraint must start on 2011-03-25 → must start on 2011-03-28 |

## Version 28 (saved 2011-03-16)

Last finish stays 2011-04-01. Complete tasks 120 → 123.

Added:

| ID | Task | Duration | Start | Finish | Predecessors | Resources |
| --- | --- | --- | --- | --- | --- | --- |
| 153 | [NBIA-351] Investigate materialized views for the DICOM_IMAGE view used by the grid data service | 1w | 2011-03-18 | 2011-03-24 | 149 | Jim |

Changed:

| ID | Task | Start | Finish | Duration | Complete | Total float |
| --- | --- | --- | --- | --- | --- | --- |
| 134 | **Misc 5.1 Issues** |  | 2011-03-22 → 2011-03-24 (+2d) | 42d → 44d | 91% → 92% | 8d → 6d |
| 144 | [NBIA-358] Devise prototype for classic search page that we can use to elicit requirements |  | 2011-03-16 A |  | 75% → 100% | 12d → none |
| 149 | **[NBIA-357] NBIA Grid Service to support AIM Object Query and Retrieval from NBIA** |  | 2011-03-22 → 2011-03-17 A (-5d) | 15d → 12d | 75% → 100% | 8d → none |
| 152 | Testing |  | 2011-03-22 → 2011-03-17 A (-5d) | 1w → 2d | 25% → 100% | 8d → none |
| 213 | **NBIA 5.0.2** |  |  |  | 38% → 54% | 4.5d → 0d |
| 218 | Update Installation Guide | 2011-03-15 A | 2011-03-16 A |  | 0% → 100% | 12d → none |

## Version 29 (saved 2011-03-17)

Note of the change: wip

Last finish stays 2011-04-01.

Changed:

| ID | Task | Start | Finish | Complete | Total float | Other |
| --- | --- | --- | --- | --- | --- | --- |
| 134 | **Misc 5.1 Issues** |  |  | 92% → 94% |  |  |
| 153 | [NBIA-351] Investigate materialized views for the DICOM_IMAGE view used by the grid data service | 2011-03-18 A |  | 0% → 25% |  |  |
| 219 | NIAMS Staging Deployment | 2011-03-23 → 2011-03-24 (+1d) | 2011-03-23 → 2011-03-24 (+1d) |  | 0d → 1d | constraint must start on 2011-03-23 → finish no earlier than 2011-03-24 |

## Version 30 (saved 2011-03-22)

Last finish stays 2011-04-01. Complete tasks 123 → 124.

Added:

| ID | Task | Duration | Start | Finish | Predecessors | Resources |
| --- | --- | --- | --- | --- | --- | --- |
| 145 | [NBIA-359] Restrict the number of results that can be returned by QC Tool search and provide submission date search criteria to focus results | 9d | 2011-03-21 A | 2011-03-31 | 144 | Prakash |
| 154 | [NBIA-370] Annotation files cannot be downloaded from remote node | 10d | 2011-03-18 A | 2011-03-31 | 150 | Jim |

Removed: 153 [NBIA-351] Investigate materialized views for the DICOM_IMAGE view used by the grid data service

Changed:

| ID | Task | Start | Finish | Duration | Complete | Total float | Other |
| --- | --- | --- | --- | --- | --- | --- | --- |
| 134 | **Misc 5.1 Issues** |  | 2011-03-24 → 2011-03-31 (+7d) | 44d → 49d | 94% → 80% | 6d → 1d |  |
| 144 | [NBIA-358] Devise prototype for classic search page that we can use to elicit requirements |  | 2011-03-16 A → 2011-03-18 A (+2d) | 8d → 10d |  |  |  |
| 212 | LSDAM, BRIDG support |  |  |  | 66% → 80% |  |  |
| 214 | **NBIA 5.0.2** |  |  |  | 54% → 82% |  |  |
| 218 | QA | 2011-03-15 A | 2011-03-21 → 2011-03-22 (+1d) | 1w → 6d | 0% → 75% | 1d → 2.5d |  |
| 220 | NIAMS Staging Deployment |  |  |  |  |  | resources none → Eric |
| 221 | NIAMS Production Deployment |  |  |  |  |  | resources none → Eric |
| 223 | **[NBIA-361] Cedara-AIM Automation** |  |  |  | 28% → 56% |  |  |
| 225 | **CTP Database Adapter Enhancement** | 2011-03-15 A |  |  | 0% → 63% |  |  |
| 226 | Integrate XSLT transformation | 2011-03-15 A | 2011-03-21 A |  | 0% → 100% | 1d → none |  |

## Version 31 (saved 2011-03-28)

Last finish stays 2011-04-01. Complete tasks 124 → 127.

Changed:

| ID | Task | Start | Finish | Complete | Total float |
| --- | --- | --- | --- | --- | --- |
| 134 | **Misc 5.1 Issues** |  |  | 80% → 91% |  |
| 145 | [NBIA-359] Restrict the number of results that can be returned by QC Tool search and provide submission date search criteria to focus results |  |  | 10% → 50% |  |
| 154 | [NBIA-370] Annotation files cannot be downloaded from remote node |  |  | 25% → 75% |  |
| 214 | **NBIA 5.0.2** |  |  | 82% → 93% |  |
| 218 | QA |  | 2011-03-22 A | 75% → 100% | 2.5d → none |
| 223 | **[NBIA-361] Cedara-AIM Automation** |  |  | 56% → 78% |  |
| 225 | **CTP Database Adapter Enhancement** |  | 2011-03-24 A | 63% → 100% | 1d → none |
| 227 | Save/Update of transformed XML | 2011-03-22 A | 2011-03-24 A | 0% → 100% | 1d → none |
| 228 | Build/Deployment script changes | 2011-03-25 A | 2011-03-25 A | 0% → 100% | 1d → none |

## Version 32 (saved 2011-03-29)

Last finish stays 2011-04-01.

Changed:

| ID | Task | Start | Complete |
| --- | --- | --- | --- |
| 134 | **Misc 5.1 Issues** |  | 91% → 94% |
| 145 | [NBIA-359] Restrict the number of results that can be returned by QC Tool search and provide submission date search criteria to focus results |  | 50% → 75% |
| 223 | **[NBIA-361] Cedara-AIM Automation** |  | 78% → 83% |
| 229 | Testing | 2011-03-28 A | 0% → 25% |

## Version 33 (saved 2011-04-05)

Last finish 2011-04-01 → 2011-04-15 (+14d). Complete tasks 127 → 129.

Added:

| ID | Task | Duration | Start | Finish | Predecessors | Constraint | Resources |
| --- | --- | --- | --- | --- | --- | --- | --- |
| 146 | [NBIA-375] Improve or remove the anatomical site criteria for patient search | 2w | 2011-04-01 A | 2011-04-14 | 145 |  | Prakash |
| 156 | [NBIA-377] Investigate using Spring+POJO for message beans. | 2w | 2011-04-01 A | 2011-04-14 | 155 |  | Jim |
| 158 | [NBIA-347] Change all internal ncia artifacts over to nbia | 1w | 2011-04-04 A | 2011-04-08 |  | must start on 2011-04-04 | Eric |
| 159 | [NBIA-348] Optimize CI build time to ~10 minutes (Rethink the use of dbUnit for automated testing) | 1w | 2011-04-11 | 2011-04-15 | 158 |  | Eric |
| 235 | [NBIA-378] Investigate conversion of Cedara-AIM into real AIM document | 8d | 2011-04-05 | 2011-04-14 | 234 |  | Qinyan |

Changed:

| ID | Task | Finish | Duration | Complete | Total float |
| --- | --- | --- | --- | --- | --- |
| 134 | **Misc 5.1 Issues** | 2011-03-31 → 2011-04-15 (+15d) | 49d → 60d | 94% → 77% | 1d → 0d |
| 145 | [NBIA-359] Restrict the number of results that can be returned by QC Tool search and provide submission date search criteria to focus results | 2011-03-31 A |  | 75% → 100% | 1d → none |
| 155 | [NBIA-370] Annotation files cannot be downloaded from remote node | 2011-03-31 A |  | 75% → 100% | 1d → none |
| 228 | **[NBIA-361] Cedara-AIM Automation** | 2011-03-31 → 2011-04-14 (+14d) | 18d → 28d | 83% → 64% |  |
| 234 | Testing | 2011-03-31 → 2011-04-04 (+4d) | 4d → 6d | 25% → 67% |  |

## Version 34 (saved 2011-04-12)

Note of the change: Merge branch 'gh-pages' of https://github.com/NCIP/national-biomedical-image-archive into gh-pages

Last finish 2011-04-15 → 2011-04-22 (+7d). Complete tasks 129 → 132.

Added:

| ID | Task | Duration | Start | Finish | Predecessors | Constraint | Resources |
| --- | --- | --- | --- | --- | --- | --- | --- |
| 147 | Investigate IceFaces 2.0 for enhancing search UI | 5d | 2011-04-11 A | 2011-04-15 | 146 |  | Prakash |
| 238 | Wrap-up Documentation | 5d | 2011-04-18 | 2011-04-22 |  | must start on 2011-04-18 | Eric; Jim; Qinyan |

Changed:

| ID | Task | Start | Finish | Duration | Complete | Total float |
| --- | --- | --- | --- | --- | --- | --- |
| 134 | **Misc 5.1 Issues** |  |  |  | 77% → 87% | 0d → 5d |
| 146 | [NBIA-375] Improve or remove the anatomical site criteria for patient search |  | 2011-04-14 → 2011-04-08 A (-6d) | 2w → 6d | 25% → 100% | 1d → none |
| 157 | [NBIA-377] Investigate using Spring+POJO for message beans. |  | 2011-04-14 → 2011-04-15 (+1d) | 2w → 11d | 10% → 50% | 1d → 5d |
| 159 | [NBIA-347] Change all internal ncia artifacts over to nbia |  | 2011-04-08 A |  | 25% → 100% | 0d → none |
| 160 | [NBIA-348] Optimize CI build time to ~10 minutes (Rethink the use of dbUnit for automated testing) | 2011-04-11 A |  |  | 0% → 10% | 0d → 5d |
| 229 | **[NBIA-361] Cedara-AIM Automation** |  | 2011-04-14 → 2011-04-22 (+8d) | 28d → 34d | 64% → 72% | 1d → 0d |
| 235 | Testing |  | 2011-04-04 A |  | 67% → 100% | 1d → none |
| 236 | [NBIA-378] Investigate conversion of Cedara-AIM into real AIM document | 2011-04-05 A | 2011-04-14 → 2011-04-15 (+1d) | 8d → 9d | 0% → 50% | 1d → 5d |
